# Module 10

Schedule from MS Project, 2021-01-05 to 2021-11-12, costs in $.
University of Florida

## Calendars

- Standard: Mon-Fri 08:00-12:00, 13:00-17:00; Sat-Sun off. Exceptions (off unless hours are given): 2021-01-18 (Martin Luther King Jr. Day), 2021-02-15 (President's Day), 2021-05-31 (Memorial Day), 2021-07-04 to 2021-07-05 (Independence Day), 2021-09-06 (Labor Day), 2021-10-11 (Columbus Day), 2021-11-11 (Veterans Day).

## Resources

| Resource | Rate | Cost per use |
| --- | --- | --- |
| George Cranston |  |  |
| James Connor |  |  |
| Mary Pearson |  |  |
| William Scott |  |  |
| Julie Green |  |  |
| Steve Haskell |  |  |
| James O'Donnell |  |  |
| Wilma Marcy |  |  |
| Phillip Greenberg |  |  |
| Johnathan Perry |  |  |
| Linda Thornton |  |  |
| Gerald Peritoni |  |  |
| Elizabeth Walton |  |  |
| Shirley Johnson |  |  |
| Alan Swanson |  |  |
| Jordan Kempler | 250 |  |
| Oshoriame Olorife | 145 |  |
| Stephanie Williams | 100 |  |
| Gerald Hasper | 78 |  |
| Eileen Seymour | 105 |  |
| Kate O'Ryan | 300 |  |
| Rohan Shah | 60 |  |
| Shravani Sinha | 75 |  |
| William Holt | 65 |  |
| Ashish Nehra | 50 |  |
| Margy Orozco | 90 |  |
| Samrudh Untgod Preetham | 90 |  |
| Remi Dijon | 90 |  |
| Teresa Ng | 90 |  |
| Anthony Noto | 90 |  |
| Drone Prototypes |  | 72136 |
| Drone Maintenance |  | 20000 |
| Travel - Flight (Wilmont's PMs) |  | 1850 |
| Permitting |  | 250 |
| Additional Feature Materials |  | 3300 |
| Paint and Logos |  | 750 |
| Company Lunches |  | 300 |
| Travel - Flight (George Cranston) |  | 243 |
| Travel - DroneTech Gas Weekly |  | 60 |
| Subcontractor - Programmer | 55 |  |
| Subcontractor - Engineer | 65 |  |

## Schedule

| ID | WBS | Task | Duration | Start | Finish | Predecessors | Total slack | Free slack | Constraint | Resources | Work | Cost |
| --- | --- | --- | --- | --- | --- | --- | --- | --- | --- | --- | --- | --- |
| 1 | 1 | **DELIVERYMEDS** | 216.5d | 2021-01-05 08:00 | 2021-11-12 12:00 |  | 0d |  |  |  | 5748.6h | 456,890.7 |
| 3 | 1.1 | **Design** | 71.5d | 2021-01-05 08:00 | 2021-04-16 12:00 |  | 0d |  |  |  | 1673h | 122,961 |
| 4 | 1.1.1 | **Project Mgmt.** | 71.25d | 2021-01-05 08:00 | 2021-04-16 10:00 |  | 0d |  |  |  | 353h | 38,531 |
| 5 | 1.1.1.1 | **Client** | 71.25d | 2021-01-05 08:00 | 2021-04-16 10:00 |  | 0d |  |  |  | 185h | 18,031 |
| 6 | 1.1.1.1.1 | **Contract** | 10.5d | 2021-01-05 08:00 | 2021-01-20 12:00 |  | 0d |  |  |  | 152h | 14,296 |
| 7 | 1.1.1.1.1.1 | Identifying Scope | 2d | 2021-01-05 08:00 | 2021-01-06 17:00 |  | 0d |  |  | Oshoriame Olorife; George Cranston; Travel - Flight (George Cranston); Phillip Greenberg | 48h | 2,563 |
| 8 | 1.1.1.1.1.2 | Creating Budget | 2d | 2021-01-07 08:00 | 2021-01-08 17:00 | 7 | 0d |  |  | Stephanie Williams | 16h | 1,600 |
| 9 | 1.1.1.1.1.3 | Creating Timeline | 2d | 2021-01-11 08:00 | 2021-01-12 17:00 | 8 | 0d |  |  | Oshoriame Olorife [50%]; Margy Orozco [50%] | 16h | 1,880 |
| 10 | 1.1.1.1.1.4 | Create Indemnification/Liability Clauses | 0.5d | 2021-01-13 08:00 | 2021-01-13 12:00 | 9, 39, 40 | 0d |  |  | Oshoriame Olorife [50%]; Kate O'Ryan [50%]; George Cranston [50%]; Alan Swanson [50%] | 8h | 890 |
| 11 | 1.1.1.1.1.5 | Finalize Contract | 4d | 2021-01-13 13:00 | 2021-01-20 12:00 | 10 | 0d |  |  | George Cranston [50%]; Oshoriame Olorife [50%]; Kate O'Ryan [50%]; Alan Swanson [50%]; Travel - Flight (George Cranston) | 64h | 7,363 |
| 12 | 1.1.1.1.2 | **Communications** | 59.25d | 2021-01-22 08:00 | 2021-04-16 10:00 |  | 145.25d |  |  | Travel - Flight (Wilmont's PMs) | 33h | 3,735 |
| 13 | 1.1.1.1.2.1 | **Biweekly Client Meeting** | 59.25d | 2021-01-22 08:00 | 2021-04-16 10:00 | 11 | 145.25d |  |  |  | 33h | 1,885 |
| 14 | 1.1.1.1.2.1.1 | Biweekly Client Meeting 1 | 1h | 2021-01-22 08:00 | 2021-01-22 09:00 |  | 204.38d |  | start no earlier than 2021-01-22 08:00 | Oshoriame Olorife; George Cranston; Phillip Greenberg | 3h | 145 |
| 15 | 1.1.1.1.2.1.2 | Biweekly Client Meeting 2 | 2h | 2021-02-05 08:00 | 2021-02-05 10:00 |  | 194.25d |  | start no earlier than 2021-02-05 08:00 | Oshoriame Olorife; George Cranston | 4h | 290 |
| 16 | 1.1.1.1.2.1.3 | Biweekly Client Meeting 3 | 2h | 2021-02-19 08:00 | 2021-02-19 10:00 |  | 185.25d |  | start no earlier than 2021-02-19 08:00 | Oshoriame Olorife; George Cranston; Phillip Greenberg | 6h | 290 |
| 17 | 1.1.1.1.2.1.4 | Biweekly Client Meeting 4 | 2h | 2021-03-05 08:00 | 2021-03-05 10:00 |  | 175.25d |  | start no earlier than 2021-03-05 08:00 | Oshoriame Olorife; George Cranston | 4h | 290 |
| 18 | 1.1.1.1.2.1.5 | Biweekly Client Meeting 5 | 2h | 2021-03-19 08:00 | 2021-03-19 10:00 |  | 165.25d |  | start no earlier than 2021-03-19 08:00 | Oshoriame Olorife; George Cranston; Phillip Greenberg | 6h | 290 |
| 19 | 1.1.1.1.2.1.6 | Biweekly Client Meeting 6 | 2h | 2021-04-02 08:00 | 2021-04-02 10:00 |  | 155.25d |  | start no earlier than 2021-04-02 08:00 | Oshoriame Olorife; George Cranston | 4h | 290 |
| 20 | 1.1.1.1.2.1.7 | Biweekly Client Meeting 7 | 2h | 2021-04-16 08:00 | 2021-04-16 10:00 |  | 145.25d |  | start no earlier than 2021-04-16 08:00 | Oshoriame Olorife; George Cranston; Phillip Greenberg | 6h | 290 |
| 21 | 1.1.1.2 | **Team** | 56.75d | 2021-01-20 13:00 | 2021-04-12 10:00 |  | 0d |  |  |  | 124h | 15,880 |
| 22 | 1.1.1.2.1 | **Staff** | 5d | 2021-01-20 13:00 | 2021-01-27 12:00 |  | 0d |  |  |  | 24h | 2,820 |
| 23 | 1.1.1.2.1.1 | Select Team | 3d | 2021-01-20 13:00 | 2021-01-25 12:00 | 11 | 0d |  |  | Oshoriame Olorife [50%]; Margy Orozco [50%] | 24h | 2,820 |
| 24 | 1.1.1.2.1.2 | Team Building Exercises | 2d | 2021-01-25 13:00 | 2021-01-27 12:00 | 23 | 0.75d | 0d |  |  |  |  |
| 25 | 1.1.1.2.2 | **Communications** | 49.25d | 2021-02-01 08:00 | 2021-04-12 10:00 |  | 149.25d |  |  |  | 100h | 13,060 |
| 26 | 1.1.1.2.2.1 | **Weekly Staff Meetings** | 49.25d | 2021-02-01 08:00 | 2021-04-12 10:00 |  | 149.25d |  |  |  | 100h | 13,060 |
| 27 | 1.1.1.2.2.1.1 | Weekly Staff Meetings 1 | 2h | 2021-02-01 08:00 | 2021-02-01 10:00 |  | 198.25d |  | start no earlier than 2021-02-01 08:00 | Oshoriame Olorife; Eileen Seymour; Gerald Hasper; Shravani Sinha; Stephanie Williams; Company Lunches | 10h | 1,306 |
| 28 | 1.1.1.2.2.1.2 | Weekly Staff Meetings 2 | 2h | 2021-02-08 08:00 | 2021-02-08 10:00 |  | 193.25d |  | start no earlier than 2021-02-08 08:00 | Oshoriame Olorife; Eileen Seymour; Gerald Hasper; Shravani Sinha; Stephanie Williams; Company Lunches | 10h | 1,306 |
| 29 | 1.1.1.2.2.1.3 | Weekly Staff Meetings 3 | 2h | 2021-02-22 08:00 | 2021-02-22 10:00 |  | 184.25d |  | start no earlier than 2021-02-22 08:00 | Oshoriame Olorife; Eileen Seymour; Gerald Hasper; Shravani Sinha; Stephanie Williams; Company Lunches | 10h | 1,306 |
| 30 | 1.1.1.2.2.1.4 | Weekly Staff Meetings 4 | 2h | 2021-03-01 08:00 | 2021-03-01 10:00 |  | 179.25d |  | start no earlier than 2021-03-01 08:00 | Oshoriame Olorife; Eileen Seymour; Gerald Hasper; Shravani Sinha; Stephanie Williams; Company Lunches | 10h | 1,306 |
| 31 | 1.1.1.2.2.1.5 | Weekly Staff Meetings 5 | 2h | 2021-03-08 08:00 | 2021-03-08 10:00 |  | 174.25d |  | start no earlier than 2021-03-08 08:00 | Oshoriame Olorife; Eileen Seymour; Gerald Hasper; Shravani Sinha; Stephanie Williams; Company Lunches | 10h | 1,306 |
| 32 | 1.1.1.2.2.1.6 | Weekly Staff Meetings 6 | 2h | 2021-03-15 08:00 | 2021-03-15 10:00 |  | 169.25d |  | start no earlier than 2021-03-15 08:00 | Oshoriame Olorife; Eileen Seymour; Gerald Hasper; Shravani Sinha; Stephanie Williams; Company Lunches | 10h | 1,306 |
| 33 | 1.1.1.2.2.1.7 | Weekly Staff Meetings 7 | 2h | 2021-03-22 08:00 | 2021-03-22 10:00 |  | 164.25d |  | start no earlier than 2021-03-22 08:00 | Oshoriame Olorife; Eileen Seymour; Gerald Hasper; Shravani Sinha; Stephanie Williams; Company Lunches | 10h | 1,306 |
| 34 | 1.1.1.2.2.1.8 | Weekly Staff Meetings 8 | 2h | 2021-03-29 08:00 | 2021-03-29 10:00 |  | 159.25d |  | start no earlier than 2021-03-29 08:00 | Oshoriame Olorife; Eileen Seymour; Gerald Hasper; Shravani Sinha; Stephanie Williams; Company Lunches | 10h | 1,306 |
| 35 | 1.1.1.2.2.1.9 | Weekly Staff Meetings 9 | 2h | 2021-04-05 08:00 | 2021-04-05 10:00 |  | 154.25d |  | start no earlier than 2021-04-05 08:00 | Oshoriame Olorife; Eileen Seymour; Gerald Hasper; Shravani Sinha; Stephanie Williams; Company Lunches | 10h | 1,306 |
| 36 | 1.1.1.2.2.1.10 | Weekly Staff Meetings 10 | 2h | 2021-04-12 08:00 | 2021-04-12 10:00 |  | 149.25d |  | start no earlier than 2021-04-12 08:00 | Oshoriame Olorife; Eileen Seymour; Gerald Hasper; Shravani Sinha; Stephanie Williams; Company Lunches | 10h | 1,306 |

| ID | WBS | Task | Duration | Start | Finish | Predecessors | Total slack | Free slack | Constraint | Resources | Work | Cost |
| --- | --- | --- | --- | --- | --- | --- | --- | --- | --- | --- | --- | --- |
| 37 | 1.1.1.3 | **Project** | 3d | 2021-01-07 08:00 | 2021-01-11 17:00 |  | 1d |  |  |  | 44h | 4,620 |
| 38 | 1.1.1.3.1 | **Risk Assessment** | 3d | 2021-01-07 08:00 | 2021-01-11 17:00 |  | 1d |  |  |  | 44h | 4,620 |
| 39 | 1.1.1.3.1.1 | Perform Risk Register | 3d | 2021-01-07 08:00 | 2021-01-11 17:00 | 7 | 1d |  | finish no earlier than 2021-01-11 17:00 | Oshoriame Olorife [50%]; Teresa Ng [50%] | 24h | 2,820 |
| 40 | 1.1.1.3.1.2 | Establish Contingency Plans | 2d | 2021-01-07 08:00 | 2021-01-08 17:00 | 7 | 2d |  |  | Samrudh Untgod Preetham; Teresa Ng [25%] | 20h | 1,800 |
| 41 | 1.1.2 | **Drone Requirements** | 56d | 2021-01-27 13:00 | 2021-04-16 12:00 |  | 0d |  |  |  | 840h | 56,930 |
| 42 | 1.1.2.1 | **Permitting** | 3d | 2021-01-27 13:00 | 2021-02-01 12:00 |  | 53d |  |  | Permitting | 32h | 4,410 |
| 43 | 1.1.2.1.1 | **FAA** | 3d | 2021-01-27 13:00 | 2021-02-01 12:00 |  | 53d |  |  |  | 32h | 4,160 |
| 44 | 1.1.2.1.1.1 | Regulatory Research | 1d | 2021-01-27 13:00 | 2021-01-28 12:00 | 11, 24 | 54d | 1d |  | Anthony Noto | 8h | 720 |
| 45 | 1.1.2.1.1.2 | Permitting Documentation | 2d | 2021-01-27 13:00 | 2021-01-29 12:00 | 11, 24 | 53d | 0d |  | Oshoriame Olorife [25%]; Margy Orozco [50%]; Kate O'Ryan [25%] | 16h | 2,500 |
| 46 | 1.1.2.1.1.3 | Meeting with FAA Representatives | 1d | 2021-01-29 13:00 | 2021-02-01 12:00 | 44, 45 | 53d |  |  | Anthony Noto [50%]; Oshoriame Olorife [50%] | 8h | 940 |
| 47 | 1.1.2.2 | **Packaging** | 56d | 2021-01-27 13:00 | 2021-04-16 12:00 |  | 0d |  |  |  | 808h | 52,520 |
| 48 | 1.1.2.2.1 | **Bubble Wrapping** | 45d | 2021-01-27 13:00 | 2021-04-01 12:00 |  | 8d |  |  |  | 360h | 23,400 |
| 49 | 1.1.2.2.1.1 | Design Bubble Wrapping System | 45d | 2021-01-27 13:00 | 2021-04-01 12:00 | 11, 24 | 8d |  |  | William Holt [50%]; Subcontractor - Engineer [50%] | 360h | 23,400 |
| 50 | 1.1.2.2.2 | **Temperature Control** | 53d | 2021-01-27 13:00 | 2021-04-13 12:00 |  | 0d |  |  |  | 424h | 27,560 |
| 51 | 1.1.2.2.2.1 | Design Temperature Control System | 53d | 2021-01-27 13:00 | 2021-04-13 12:00 | 11, 24 | 0d |  |  | William Holt [50%]; Subcontractor - Engineer [50%] | 424h | 27,560 |
| 52 | 1.1.2.2.3 | **Size and Weight Constraints** | 3d | 2021-04-13 13:00 | 2021-04-16 12:00 |  | 0d |  |  |  | 24h | 1,560 |
| 53 | 1.1.2.2.3.1 | Calculate maximum size and weight allowed | 3d | 2021-04-13 13:00 | 2021-04-16 12:00 | 49, 51 | 0d |  |  | William Holt [50%]; Subcontractor - Engineer [50%] | 24h | 1,560 |
| 54 | 1.1.3 | **Tech** | 54.75d | 2021-01-27 13:00 | 2021-04-15 10:00 |  | 6d |  |  |  | 480h | 27,500 |
| 55 | 1.1.3.1 | **App & Interface** | 20d | 2021-01-27 13:00 | 2021-02-25 12:00 |  | 6d |  |  |  | 176h | 10,400 |
| 56 | 1.1.3.1.1 | **Design App Features** | 20d | 2021-01-27 13:00 | 2021-02-25 12:00 |  | 6d |  |  |  | 176h | 10,400 |
| 57 | 1.1.3.1.1.1 | Customer Order Algorithm | 3d | 2021-01-27 13:00 | 2021-02-01 12:00 | 11, 24 | 6d | 0d |  | Shravani Sinha [10%]; Rohan Shah [50%]; Subcontractor - Programmer [50%] | 26.4h | 1,560 |
| 58 | 1.1.3.1.1.2 | Customer Preference (Delivery) Algorithm | 2d | 2021-02-01 13:00 | 2021-02-03 12:00 | 57 | 6d | 0d |  | Shravani Sinha [10%]; Rohan Shah [50%]; Subcontractor - Programmer [50%] | 17.6h | 1,040 |
| 59 | 1.1.3.1.1.3 | Drone Request Algorithm | 2d | 2021-02-03 13:00 | 2021-02-05 12:00 | 58 | 6d | 0d |  | Shravani Sinha [10%]; Rohan Shah [50%]; Subcontractor - Programmer [50%] | 17.6h | 1,040 |
| 60 | 1.1.3.1.1.4 | Order Confirmation Algorithm | 3d | 2021-02-05 13:00 | 2021-02-10 12:00 | 59 | 6d | 0d |  | Shravani Sinha [10%]; Rohan Shah [50%]; Subcontractor - Programmer [50%] | 26.4h | 1,560 |
| 61 | 1.1.3.1.1.5 | Communication with Server Algorithm | 10d | 2021-02-10 13:00 | 2021-02-25 12:00 | 60 | 6d | 0d |  | Shravani Sinha [10%]; Rohan Shah [50%]; Subcontractor - Programmer [50%] | 88h | 5,200 |

| ID | WBS | Task | Duration | Start | Finish | Predecessors | Total slack | Free slack | Constraint | Resources | Work | Cost |
| --- | --- | --- | --- | --- | --- | --- | --- | --- | --- | --- | --- | --- |
| 62 | 1.1.3.2 | **Security** | 44.25d | 2021-02-11 08:00 | 2021-04-15 10:00 |  | 15.5d |  |  |  | 304h | 17,100 |
| 63 | 1.1.3.2.1 | **HIPAA** | 15d | 2021-02-25 13:00 | 2021-03-18 12:00 |  | 6d |  |  |  | 132h | 7,800 |
| 64 | 1.1.3.2.1.1 | Design Code for Customer Identity Protection | 15d | 2021-02-25 13:00 | 2021-03-18 12:00 | 61 | 6d | 0d |  | Shravani Sinha [10%]; Rohan Shah [50%]; Subcontractor - Programmer [50%] | 132h | 7,800 |
| 65 | 1.1.3.2.2 | **Wilmont's Business Information** | 44.25d | 2021-02-11 08:00 | 2021-04-15 10:00 |  | 30.5d |  |  |  | 172h | 9,300 |
| 66 | 1.1.3.2.2.1 | Design Algorithm for Wilmont's Business Information Protection | 15d | 2021-03-18 13:00 | 2021-04-08 12:00 | 64 | 6d |  |  | Shravani Sinha [10%]; Rohan Shah [50%]; Subcontractor - Programmer [50%] | 132h | 7,800 |
| 67 | 1.1.3.2.2.2 | **Weekly Meeting with William Scott** | 44.25d | 2021-02-11 08:00 | 2021-04-15 10:00 | 11, 24 | 146.25d |  |  |  | 40h | 1,500 |
| 68 | 1.1.3.2.2.2.1 | Weekly Meeting with William Scott 1 | 2h | 2021-02-11 08:00 | 2021-02-11 10:00 |  | 190.25d |  | start no earlier than 2021-02-11 08:00 | William Scott; Shravani Sinha | 4h | 150 |
| 69 | 1.1.3.2.2.2.2 | Weekly Meeting with William Scott 2 | 2h | 2021-02-18 08:00 | 2021-02-18 10:00 |  | 186.25d |  | start no earlier than 2021-02-18 08:00 | William Scott; Shravani Sinha | 4h | 150 |
| 70 | 1.1.3.2.2.2.3 | Weekly Meeting with William Scott 3 | 2h | 2021-02-25 08:00 | 2021-02-25 10:00 |  | 181.25d |  | start no earlier than 2021-02-25 08:00 | William Scott; Shravani Sinha | 4h | 150 |
| 71 | 1.1.3.2.2.2.4 | Weekly Meeting with William Scott 4 | 2h | 2021-03-04 08:00 | 2021-03-04 10:00 |  | 176.25d |  | start no earlier than 2021-03-04 08:00 | William Scott; Shravani Sinha | 4h | 150 |
| 72 | 1.1.3.2.2.2.5 | Weekly Meeting with William Scott 5 | 2h | 2021-03-11 08:00 | 2021-03-11 10:00 |  | 171.25d |  | start no earlier than 2021-03-11 08:00 | William Scott; Shravani Sinha | 4h | 150 |
| 73 | 1.1.3.2.2.2.6 | Weekly Meeting with William Scott 6 | 2h | 2021-03-18 08:00 | 2021-03-18 10:00 |  | 166.25d |  | start no earlier than 2021-03-18 08:00 | William Scott; Shravani Sinha | 4h | 150 |
| 74 | 1.1.3.2.2.2.7 | Weekly Meeting with William Scott 7 | 2h | 2021-03-25 08:00 | 2021-03-25 10:00 |  | 161.25d |  | start no earlier than 2021-03-25 08:00 | William Scott; Shravani Sinha | 4h | 150 |
| 75 | 1.1.3.2.2.2.8 | Weekly Meeting with William Scott 8 | 2h | 2021-04-01 08:00 | 2021-04-01 10:00 |  | 156.25d |  | start no earlier than 2021-04-01 08:00 | William Scott; Shravani Sinha | 4h | 150 |
| 76 | 1.1.3.2.2.2.9 | Weekly Meeting with William Scott 9 | 2h | 2021-04-08 08:00 | 2021-04-08 10:00 |  | 151.25d |  | start no earlier than 2021-04-08 08:00 | William Scott; Shravani Sinha | 4h | 150 |
| 77 | 1.1.3.2.2.2.10 | Weekly Meeting with William Scott 10 | 2h | 2021-04-15 08:00 | 2021-04-15 10:00 |  | 146.25d |  | start no earlier than 2021-04-15 08:00 | William Scott; Shravani Sinha | 4h | 150 |
| 78 | 1.2 | **Build** | 63d | 2021-04-16 13:00 | 2021-07-16 12:00 |  | 0d |  |  | Drone Prototypes | 1058.6h | 168,619.7 |
| 79 | 1.2.1 | **Project Mgmt.** | 62.25d | 2021-04-19 08:00 | 2021-07-16 10:00 |  | 82.25d |  |  |  | 129h | 16,318.5 |
| 80 | 1.2.1.1 | **Client** | 58.25d | 2021-04-23 08:00 | 2021-07-16 10:00 |  | 82.25d |  |  |  | 36h | 3,880 |
| 81 | 1.2.1.1.1 | **Communications** | 58.25d | 2021-04-23 08:00 | 2021-07-16 10:00 |  | 82.25d |  |  | Travel - Flight (Wilmont's PMs) | 36h | 3,880 |
| 82 | 1.2.1.1.1.1 | **Biweekly Client Meeting** | 58.25d | 2021-04-23 08:00 | 2021-07-16 10:00 | 46, 53, 66 | 82.25d |  |  |  | 36h | 2,030 |
| 83 | 1.2.1.1.1.1.1 | Biweekly Client Meeting 1 | 2h | 2021-04-23 08:00 | 2021-04-23 10:00 |  | 140.25d |  | start no earlier than 2021-04-23 08:00 | Oshoriame Olorife; George Cranston; Phillip Greenberg | 6h | 290 |
| 84 | 1.2.1.1.1.1.2 | Biweekly Client Meeting 2 | 2h | 2021-05-07 08:00 | 2021-05-07 10:00 |  | 130.25d |  | start no earlier than 2021-05-07 08:00 | Oshoriame Olorife; George Cranston | 4h | 290 |
| 85 | 1.2.1.1.1.1.3 | Biweekly Client Meeting 3 | 2h | 2021-05-21 08:00 | 2021-05-21 10:00 |  | 120.25d |  | start no earlier than 2021-05-21 08:00 | Oshoriame Olorife; George Cranston; Phillip Greenberg | 6h | 290 |
| 86 | 1.2.1.1.1.1.4 | Biweekly Client Meeting 4 | 2h | 2021-06-04 08:00 | 2021-06-04 10:00 |  | 111.25d |  | start no earlier than 2021-06-04 08:00 | Oshoriame Olorife; George Cranston | 4h | 290 |
| 87 | 1.2.1.1.1.1.5 | Biweekly Client Meeting 5 | 2h | 2021-06-18 08:00 | 2021-06-18 10:00 |  | 101.25d |  | start no earlier than 2021-06-18 08:00 | Oshoriame Olorife; George Cranston; Phillip Greenberg | 6h | 290 |
| 88 | 1.2.1.1.1.1.6 | Biweekly Client Meeting 6 | 2h | 2021-07-02 08:00 | 2021-07-02 10:00 |  | 91.25d |  | start no earlier than 2021-07-02 08:00 | Oshoriame Olorife; George Cranston | 4h | 290 |
| 89 | 1.2.1.1.1.1.7 | Biweekly Client Meeting 7 | 2h | 2021-07-16 08:00 | 2021-07-16 10:00 |  | 82.25d |  | start no earlier than 2021-07-16 08:00 | Oshoriame Olorife; George Cranston; Phillip Greenberg | 6h | 290 |

| ID | WBS | Task | Duration | Start | Finish | Predecessors | Total slack | Constraint | Resources | Work | Cost |
| --- | --- | --- | --- | --- | --- | --- | --- | --- | --- | --- | --- |
| 90 | 1.2.1.2 | **Team** | 61.12d | 2021-04-19 08:00 | 2021-07-15 09:00 |  | 83.38d |  |  | 93h | 12,438.5 |
| 91 | 1.2.1.2.1 | **Managing Test Staff** | 0.5d | 2021-05-05 08:00 | 2021-05-05 12:00 |  | 132d |  |  | 8h | 903 |
| 92 | 1.2.1.2.1.1 | **Quarterly Staff Evaluation** | 0.5d | 2021-05-05 08:00 | 2021-05-05 12:00 | 46, 53, 66 | 132d |  |  | 8h | 903 |
| 93 | 1.2.1.2.1.1.1 | Quarterly Staff Evaluation 1 | 0.5d | 2021-05-05 08:00 | 2021-05-05 12:00 |  | 132d | start no earlier than 2021-05-05 08:00 | Anthony Noto [25%]; Eileen Seymour [25%]; Ashish Nehra [25%]; Gerald Hasper [25%]; Oshoriame Olorife | 8h | 903 |
| 94 | 1.2.1.2.2 | **Quality Assurance** | 61.12d | 2021-04-19 08:00 | 2021-07-15 09:00 |  | 83.38d |  |  | 68h | 10,133 |
| 95 | 1.2.1.2.2.1 | **Weekly Cost Analysis Report** | 58.12d | 2021-04-22 08:00 | 2021-07-15 09:00 | 46, 53, 66 | 83.38d |  |  | 13h | 1,300 |
| 96 | 1.2.1.2.2.1.1 | Weekly Cost Analysis Report 1 | 1h | 2021-04-22 08:00 | 2021-04-22 09:00 |  | 141.38d | start no earlier than 2021-04-22 08:00 | Stephanie Williams | 1h | 100 |
| 97 | 1.2.1.2.2.1.2 | Weekly Cost Analysis Report 2 | 1h | 2021-04-29 08:00 | 2021-04-29 09:00 |  | 136.38d | start no earlier than 2021-04-29 08:00 | Stephanie Williams | 1h | 100 |
| 98 | 1.2.1.2.2.1.3 | Weekly Cost Analysis Report 3 | 1h | 2021-05-06 08:00 | 2021-05-06 09:00 |  | 131.38d | start no earlier than 2021-05-06 08:00 | Stephanie Williams | 1h | 100 |
| 99 | 1.2.1.2.2.1.4 | Weekly Cost Analysis Report 4 | 1h | 2021-05-13 08:00 | 2021-05-13 09:00 |  | 126.38d | start no earlier than 2021-05-13 08:00 | Stephanie Williams | 1h | 100 |
| 100 | 1.2.1.2.2.1.5 | Weekly Cost Analysis Report 5 | 1h | 2021-05-20 08:00 | 2021-05-20 09:00 |  | 121.38d | start no earlier than 2021-05-20 08:00 | Stephanie Williams | 1h | 100 |
| 101 | 1.2.1.2.2.1.6 | Weekly Cost Analysis Report 6 | 1h | 2021-05-27 08:00 | 2021-05-27 09:00 |  | 116.38d | start no earlier than 2021-05-27 08:00 | Stephanie Williams | 1h | 100 |
| 102 | 1.2.1.2.2.1.7 | Weekly Cost Analysis Report 7 | 1h | 2021-06-03 08:00 | 2021-06-03 09:00 |  | 112.38d | start no earlier than 2021-06-03 08:00 | Stephanie Williams | 1h | 100 |
| 103 | 1.2.1.2.2.1.8 | Weekly Cost Analysis Report 8 | 1h | 2021-06-10 08:00 | 2021-06-10 09:00 |  | 107.38d | start no earlier than 2021-06-10 08:00 | Stephanie Williams | 1h | 100 |
| 104 | 1.2.1.2.2.1.9 | Weekly Cost Analysis Report 9 | 1h | 2021-06-17 08:00 | 2021-06-17 09:00 |  | 102.38d | start no earlier than 2021-06-17 08:00 | Stephanie Williams | 1h | 100 |
| 105 | 1.2.1.2.2.1.10 | Weekly Cost Analysis Report 10 | 1h | 2021-06-24 08:00 | 2021-06-24 09:00 |  | 97.38d | start no earlier than 2021-06-24 08:00 | Stephanie Williams | 1h | 100 |
| 106 | 1.2.1.2.2.1.11 | Weekly Cost Analysis Report 11 | 1h | 2021-07-01 08:00 | 2021-07-01 09:00 |  | 92.38d | start no earlier than 2021-07-01 08:00 | Stephanie Williams | 1h | 100 |
| 107 | 1.2.1.2.2.1.12 | Weekly Cost Analysis Report 12 | 1h | 2021-07-08 08:00 | 2021-07-08 09:00 |  | 88.38d | start no earlier than 2021-07-08 08:00 | Stephanie Williams | 1h | 100 |
| 108 | 1.2.1.2.2.1.13 | Weekly Cost Analysis Report 13 | 1h | 2021-07-15 08:00 | 2021-07-15 09:00 |  | 83.38d | start no earlier than 2021-07-15 08:00 | Stephanie Williams | 1h | 100 |
| 109 | 1.2.1.2.2.2 | **Weekly Staff Meeting** | 58.12d | 2021-04-19 08:00 | 2021-07-12 09:00 | 46, 53, 66 | 86.38d |  |  | 55h | 8,833 |
| 110 | 1.2.1.2.2.2.1 | Weekly Staff Meeting 1 | 1h | 2021-04-19 08:00 | 2021-04-19 09:00 |  | 144.38d | start no earlier than 2021-04-19 08:00 | Oshoriame Olorife; Eileen Seymour; Shravani Sinha; Gerald Hasper; Stephanie Williams; Company Lunches | 5h | 803 |
| 111 | 1.2.1.2.2.2.2 | Weekly Staff Meeting 2 | 1h | 2021-04-26 08:00 | 2021-04-26 09:00 |  | 139.38d | start no earlier than 2021-04-26 08:00 | Oshoriame Olorife; Eileen Seymour; Shravani Sinha; Gerald Hasper; Stephanie Williams; Company Lunches | 5h | 803 |
| 112 | 1.2.1.2.2.2.3 | Weekly Staff Meeting 3 | 1h | 2021-05-03 08:00 | 2021-05-03 09:00 |  | 134.38d | start no earlier than 2021-05-03 08:00 | Oshoriame Olorife; Eileen Seymour; Shravani Sinha; Gerald Hasper; Stephanie Williams; Company Lunches | 5h | 803 |
| 113 | 1.2.1.2.2.2.4 | Weekly Staff Meeting 4 | 1h | 2021-05-10 08:00 | 2021-05-10 09:00 |  | 129.38d | start no earlier than 2021-05-10 08:00 | Oshoriame Olorife; Eileen Seymour; Shravani Sinha; Gerald Hasper; Stephanie Williams; Company Lunches | 5h | 803 |
| 114 | 1.2.1.2.2.2.5 | Weekly Staff Meeting 5 | 1h | 2021-05-17 08:00 | 2021-05-17 09:00 |  | 124.38d | start no earlier than 2021-05-17 08:00 | Oshoriame Olorife; Eileen Seymour; Shravani Sinha; Gerald Hasper; Stephanie Williams; Company Lunches | 5h | 803 |
| 115 | 1.2.1.2.2.2.6 | Weekly Staff Meeting 6 | 1h | 2021-05-24 08:00 | 2021-05-24 09:00 |  | 119.38d | start no earlier than 2021-05-24 08:00 | Oshoriame Olorife; Eileen Seymour; Shravani Sinha; Gerald Hasper; Stephanie Williams; Company Lunches | 5h | 803 |
| 116 | 1.2.1.2.2.2.7 | Weekly Staff Meeting 7 | 1h | 2021-06-07 08:00 | 2021-06-07 09:00 |  | 110.38d | start no earlier than 2021-06-07 08:00 | Oshoriame Olorife; Eileen Seymour; Shravani Sinha; Gerald Hasper; Stephanie Williams; Company Lunches | 5h | 803 |
| 117 | 1.2.1.2.2.2.8 | Weekly Staff Meeting 8 | 1h | 2021-06-14 08:00 | 2021-06-14 09:00 |  | 105.38d | start no earlier than 2021-06-14 08:00 | Oshoriame Olorife; Eileen Seymour; Shravani Sinha; Gerald Hasper; Stephanie Williams; Company Lunches | 5h | 803 |
| 118 | 1.2.1.2.2.2.9 | Weekly Staff Meeting 9 | 1h | 2021-06-21 08:00 | 2021-06-21 09:00 |  | 100.38d | start no earlier than 2021-06-21 08:00 | Oshoriame Olorife; Eileen Seymour; Shravani Sinha; Gerald Hasper; Stephanie Williams; Company Lunches | 5h | 803 |
| 119 | 1.2.1.2.2.2.10 | Weekly Staff Meeting 10 | 1h | 2021-06-28 08:00 | 2021-06-28 09:00 |  | 95.38d | start no earlier than 2021-06-28 08:00 | Oshoriame Olorife; Eileen Seymour; Shravani Sinha; Gerald Hasper; Stephanie Williams; Company Lunches | 5h | 803 |
| 120 | 1.2.1.2.2.2.11 | Weekly Staff Meeting 11 | 1h | 2021-07-12 08:00 | 2021-07-12 09:00 |  | 86.38d | start no earlier than 2021-07-12 08:00 | Oshoriame Olorife; Eileen Seymour; Shravani Sinha; Gerald Hasper; Stephanie Williams; Company Lunches | 5h | 803 |

| ID | WBS | Task | Duration | Start | Finish | Predecessors | Total slack | Constraint | Resources | Work | Cost |
| --- | --- | --- | --- | --- | --- | --- | --- | --- | --- | --- | --- |
| 121 | 1.2.1.2.3 | **Quality Control** | 41.06d | 2021-04-19 08:00 | 2021-06-16 08:30 |  | 103.44d |  |  | 17h | 1,402.5 |
| 122 | 1.2.1.2.3.1 | **In-Progress Code Checks** | 41.06d | 2021-04-19 08:00 | 2021-06-16 08:30 | 46, 53, 66 | 103.44d |  |  | 17h | 1,402.5 |
| 123 | 1.2.1.2.3.1.1 | In-Progress Code Checks 1 | 0.5h | 2021-04-19 08:00 | 2021-04-19 08:30 |  | 144.44d | start no earlier than 2021-04-19 08:00 | Shravani Sinha; Samrudh Untgod Preetham | 1h | 82.5 |
| 124 | 1.2.1.2.3.1.2 | In-Progress Code Checks 2 | 0.5h | 2021-04-21 08:00 | 2021-04-21 08:30 |  | 142.44d | start no earlier than 2021-04-21 08:00 | Shravani Sinha; Samrudh Untgod Preetham | 1h | 82.5 |
| 125 | 1.2.1.2.3.1.3 | In-Progress Code Checks 3 | 0.5h | 2021-04-26 08:00 | 2021-04-26 08:30 |  | 139.44d | start no earlier than 2021-04-26 08:00 | Shravani Sinha; Samrudh Untgod Preetham | 1h | 82.5 |
| 126 | 1.2.1.2.3.1.4 | In-Progress Code Checks 4 | 0.5h | 2021-04-28 08:00 | 2021-04-28 08:30 |  | 137.44d | start no earlier than 2021-04-28 08:00 | Shravani Sinha; Samrudh Untgod Preetham | 1h | 82.5 |
| 127 | 1.2.1.2.3.1.5 | In-Progress Code Checks 5 | 0.5h | 2021-05-03 08:00 | 2021-05-03 08:30 |  | 134.44d | start no earlier than 2021-05-03 08:00 | Shravani Sinha; Samrudh Untgod Preetham | 1h | 82.5 |
| 128 | 1.2.1.2.3.1.6 | In-Progress Code Checks 6 | 0.5h | 2021-05-05 08:00 | 2021-05-05 08:30 |  | 132.44d | start no earlier than 2021-05-05 08:00 | Shravani Sinha; Samrudh Untgod Preetham | 1h | 82.5 |
| 129 | 1.2.1.2.3.1.7 | In-Progress Code Checks 7 | 0.5h | 2021-05-10 08:00 | 2021-05-10 08:30 |  | 129.44d | start no earlier than 2021-05-10 08:00 | Shravani Sinha; Samrudh Untgod Preetham | 1h | 82.5 |
| 130 | 1.2.1.2.3.1.8 | In-Progress Code Checks 8 | 0.5h | 2021-05-12 08:00 | 2021-05-12 08:30 |  | 127.44d | start no earlier than 2021-05-12 08:00 | Shravani Sinha; Samrudh Untgod Preetham | 1h | 82.5 |
| 131 | 1.2.1.2.3.1.9 | In-Progress Code Checks 9 | 0.5h | 2021-05-17 08:00 | 2021-05-17 08:30 |  | 124.44d | start no earlier than 2021-05-17 08:00 | Shravani Sinha; Samrudh Untgod Preetham | 1h | 82.5 |
| 132 | 1.2.1.2.3.1.10 | In-Progress Code Checks 10 | 0.5h | 2021-05-19 08:00 | 2021-05-19 08:30 |  | 122.44d | start no earlier than 2021-05-19 08:00 | Shravani Sinha; Samrudh Untgod Preetham | 1h | 82.5 |
| 133 | 1.2.1.2.3.1.11 | In-Progress Code Checks 11 | 0.5h | 2021-05-24 08:00 | 2021-05-24 08:30 |  | 119.44d | start no earlier than 2021-05-24 08:00 | Shravani Sinha; Samrudh Untgod Preetham | 1h | 82.5 |
| 134 | 1.2.1.2.3.1.12 | In-Progress Code Checks 12 | 0.5h | 2021-05-26 08:00 | 2021-05-26 08:30 |  | 117.44d | start no earlier than 2021-05-26 08:00 | Shravani Sinha; Samrudh Untgod Preetham | 1h | 82.5 |
| 135 | 1.2.1.2.3.1.13 | In-Progress Code Checks 13 | 0.5h | 2021-06-02 08:00 | 2021-06-02 08:30 |  | 113.44d | start no earlier than 2021-06-02 08:00 | Shravani Sinha; Samrudh Untgod Preetham | 1h | 82.5 |
| 136 | 1.2.1.2.3.1.14 | In-Progress Code Checks 14 | 0.5h | 2021-06-07 08:00 | 2021-06-07 08:30 |  | 110.44d | start no earlier than 2021-06-07 08:00 | Shravani Sinha; Samrudh Untgod Preetham | 1h | 82.5 |
| 137 | 1.2.1.2.3.1.15 | In-Progress Code Checks 15 | 0.5h | 2021-06-09 08:00 | 2021-06-09 08:30 |  | 108.44d | start no earlier than 2021-06-09 08:00 | Shravani Sinha; Samrudh Untgod Preetham | 1h | 82.5 |
| 138 | 1.2.1.2.3.1.16 | In-Progress Code Checks 16 | 0.5h | 2021-06-14 08:00 | 2021-06-14 08:30 |  | 105.44d | start no earlier than 2021-06-14 08:00 | Shravani Sinha; Samrudh Untgod Preetham | 1h | 82.5 |
| 139 | 1.2.1.2.3.1.17 | In-Progress Code Checks 17 | 0.5h | 2021-06-16 08:00 | 2021-06-16 08:30 |  | 103.44d | start no earlier than 2021-06-16 08:00 | Shravani Sinha; Samrudh Untgod Preetham | 1h | 82.5 |
| 140 | 1.2.2 | **Drone Prototype** | 63d | 2021-04-16 13:00 | 2021-07-16 12:00 |  | 0d |  |  | 542.4h | 56,829.2 |
| 141 | 1.2.2.1 | **Additional Features** | 63d | 2021-04-16 13:00 | 2021-07-16 12:00 |  | 0d |  | Additional Feature Materials | 542.4h | 56,829.2 |
| 142 | 1.2.2.1.1 | **Bubble Wrapping** | 25d | 2021-04-16 13:00 | 2021-05-21 12:00 |  | 0d |  |  | 203.2h | 20,269.6 |
| 143 | 1.2.2.1.1.1 | Manufacture bubble wrapping parts | 21d | 2021-04-16 13:00 | 2021-05-17 12:00 | 46, 53, 66 | 0d |  | Additional Feature Materials; Remi Dijon | 168h | 18,420 |
| 144 | 1.2.2.1.1.2 | Install bubble wrapping parts | 4d | 2021-05-17 13:00 | 2021-05-21 12:00 | 143 | 30d |  | Ashish Nehra; Gerald Hasper [10%] | 35.2h | 1,849.6 |

| ID | WBS | Task | Duration | Start | Finish | Predecessors | Total slack | Free slack | Constraint | Resources | Work | Cost |
| --- | --- | --- | --- | --- | --- | --- | --- | --- | --- | --- | --- | --- |
| 145 | 1.2.2.1.2 | **Temperature Control** | 34d | 2021-05-17 13:00 | 2021-07-06 12:00 |  | 0d |  |  |  | 275.2h | 26,749.6 |
| 146 | 1.2.2.1.2.1 | Manufacture temperature control parts | 30d | 2021-05-17 13:00 | 2021-06-29 12:00 | 143 | 0d |  |  | Additional Feature Materials; Remi Dijon | 240h | 24,900 |
| 147 | 1.2.2.1.2.2 | Install temperature control parts | 4d | 2021-06-29 13:00 | 2021-07-06 12:00 | 146 | 0d |  |  | Ashish Nehra; Gerald Hasper [10%] | 35.2h | 1,849.6 |
| 148 | 1.2.2.1.3 | **Drone Finishes** | 8d | 2021-07-06 13:00 | 2021-07-16 12:00 |  | 0d |  |  | Paint and Logos | 64h | 6,510 |
| 149 | 1.2.2.1.3.1 | Painting prototype drones | 5d | 2021-07-06 13:00 | 2021-07-13 12:00 | 144, 147 | 0d |  |  | Remi Dijon | 40h | 3,600 |
| 150 | 1.2.2.1.3.2 | Applying logos on drones | 3d | 2021-07-13 13:00 | 2021-07-16 12:00 | 149 | 0d |  |  | Remi Dijon | 24h | 2,160 |
| 151 | 1.2.3 | **App Development** | 25d | 2021-04-16 13:00 | 2021-05-21 12:00 |  | 19d |  |  |  | 220h | 13,000 |
| 152 | 1.2.3.1 | Customer Order Coding | 5d | 2021-04-16 13:00 | 2021-04-23 12:00 | 46, 53, 66 | 19d | 0d |  | Rohan Shah [50%]; Shravani Sinha [10%]; Subcontractor - Programmer [50%] | 44h | 2,600 |
| 153 | 1.2.3.2 | Customer Preference (Delivery) Coding | 2d | 2021-04-23 13:00 | 2021-04-27 12:00 | 152 | 19d | 0d |  | Rohan Shah [50%]; Shravani Sinha [10%]; Subcontractor - Programmer [50%] | 17.6h | 1,040 |
| 154 | 1.2.3.3 | Drone Request Coding | 5d | 2021-04-27 13:00 | 2021-05-04 12:00 | 153 | 19d | 0d |  | Rohan Shah [50%]; Shravani Sinha [10%]; Subcontractor - Programmer [50%] | 44h | 2,600 |
| 155 | 1.2.3.4 | Order Confirmation Coding | 1d | 2021-05-04 13:00 | 2021-05-05 12:00 | 154 | 19d | 0d |  | Rohan Shah [50%]; Shravani Sinha [10%]; Subcontractor - Programmer [50%] | 8.8h | 520 |
| 156 | 1.2.3.5 | Communication with Server Coding | 12d | 2021-05-05 13:00 | 2021-05-21 12:00 | 155 | 19d | 0d |  | Rohan Shah [50%]; Shravani Sinha [10%]; Subcontractor - Programmer [50%] | 105.6h | 6,240 |
| 157 | 1.2.4 | **Security** | 19d | 2021-05-21 13:00 | 2021-06-18 12:00 |  | 19d |  |  |  | 167.2h | 10,336 |
| 158 | 1.2.4.1 | Coding for Customer Identity Protection | 10d | 2021-05-21 13:00 | 2021-06-07 12:00 | 156 | 19d | 0d |  | Eileen Seymour [10%]; Rohan Shah [50%]; Subcontractor - Programmer [50%] | 88h | 5,440 |
| 159 | 1.2.4.2 | Coding for Wilmont's Business Information Protection | 9d | 2021-06-07 13:00 | 2021-06-18 12:00 | 158 | 19d |  |  | Eileen Seymour [10%]; Rohan Shah [50%]; Subcontractor - Programmer [50%] | 79.2h | 4,896 |
| 160 | 1.3 | **Test** | 59.62d | 2021-07-16 13:00 | 2021-10-12 09:00 |  | 0d |  |  |  | 1125h | 123,623 |
| 161 | 1.3.1 | **Project Mgmt.** | 58.12d | 2021-07-20 08:00 | 2021-10-12 09:00 |  | 22.38d |  |  |  | 103h | 13,059 |
| 162 | 1.3.1.1 | **Client** | 49.25d | 2021-07-23 08:00 | 2021-10-01 10:00 |  | 28.25d |  |  |  | 30h | 1,740 |
| 163 | 1.3.1.1.1 | **Communications** | 49.25d | 2021-07-23 08:00 | 2021-10-01 10:00 |  | 28.25d |  |  |  | 30h | 1,740 |
| 164 | 1.3.1.1.1.1 | **Biweekly Client Meeting** | 49.25d | 2021-07-23 08:00 | 2021-10-01 10:00 | 150, 159 | 28.25d |  |  |  | 30h | 1,740 |
| 165 | 1.3.1.1.1.1.1 | Biweekly Client Meeting 1 | 2h | 2021-07-23 08:00 | 2021-07-23 10:00 |  | 77.25d |  | start no earlier than 2021-07-23 08:00 | Oshoriame Olorife; George Cranston; Phillip Greenberg | 6h | 290 |
| 166 | 1.3.1.1.1.1.2 | Biweekly Client Meeting 2 | 2h | 2021-08-06 08:00 | 2021-08-06 10:00 |  | 67.25d |  | start no earlier than 2021-08-06 08:00 | Oshoriame Olorife; George Cranston | 4h | 290 |
| 167 | 1.3.1.1.1.1.3 | Biweekly Client Meeting 3 | 2h | 2021-08-20 08:00 | 2021-08-20 10:00 |  | 57.25d |  | start no earlier than 2021-08-20 08:00 | Oshoriame Olorife; George Cranston; Phillip Greenberg | 6h | 290 |
| 168 | 1.3.1.1.1.1.4 | Biweekly Client Meeting 4 | 2h | 2021-09-03 08:00 | 2021-09-03 10:00 |  | 47.25d |  | start no earlier than 2021-09-03 08:00 | Oshoriame Olorife; George Cranston | 4h | 290 |
| 169 | 1.3.1.1.1.1.5 | Biweekly Client Meeting 5 | 2h | 2021-09-17 08:00 | 2021-09-17 10:00 |  | 38.25d |  | start no earlier than 2021-09-17 08:00 | Oshoriame Olorife; George Cranston; Phillip Greenberg | 6h | 290 |
| 170 | 1.3.1.1.1.1.6 | Biweekly Client Meeting 6 | 2h | 2021-10-01 08:00 | 2021-10-01 10:00 |  | 28.25d |  | start no earlier than 2021-10-01 08:00 | Oshoriame Olorife; George Cranston | 4h | 290 |

| ID | WBS | Task | Duration | Start | Finish | Predecessors | Total slack | Constraint | Resources | Work | Cost |
| --- | --- | --- | --- | --- | --- | --- | --- | --- | --- | --- | --- |
| 171 | 1.3.1.2 | **Team** | 58.12d | 2021-07-20 08:00 | 2021-10-12 09:00 |  | 22.38d |  |  | 73h | 11,319 |
| 172 | 1.3.1.2.1 | **Staff** | 0.5d | 2021-08-04 08:00 | 2021-08-04 12:00 |  | 69d |  |  | 8h | 880 |
| 173 | 1.3.1.2.1.1 | **Quarterly Staff Evaluation** | 0.5d | 2021-08-04 08:00 | 2021-08-04 12:00 | 150, 159 | 69d |  |  | 8h | 880 |
| 174 | 1.3.1.2.1.1.1 | Quarterly Staff Evaluation 1 | 4h | 2021-08-04 08:00 | 2021-08-04 12:00 |  | 69d | start no earlier than 2021-08-04 08:00 | Oshoriame Olorife; Rohan Shah [25%]; Shravani Sinha [25%]; Stephanie Williams [25%]; William Holt [25%] | 8h | 880 |
| 175 | 1.3.1.2.2 | **Communications** | 58.12d | 2021-07-20 08:00 | 2021-10-12 09:00 |  | 22.38d |  |  | 65h | 10,439 |
| 176 | 1.3.1.2.2.1 | **Weekly Staff Meeting** | 58.12d | 2021-07-20 08:00 | 2021-10-12 09:00 | 150, 159 | 22.38d |  |  | 65h | 10,439 |
| 177 | 1.3.1.2.2.1.1 | Weekly Staff Meeting 1 | 1h | 2021-07-20 08:00 | 2021-07-20 09:00 |  | 80.38d | start no earlier than 2021-07-20 08:00 | Shravani Sinha; Stephanie Williams; Eileen Seymour; Oshoriame Olorife; Company Lunches; Gerald Hasper | 5h | 803 |
| 178 | 1.3.1.2.2.1.2 | Weekly Staff Meeting 2 | 1h | 2021-07-27 08:00 | 2021-07-27 09:00 |  | 75.38d | start no earlier than 2021-07-27 08:00 | Oshoriame Olorife; Gerald Hasper; Shravani Sinha; Stephanie Williams; Company Lunches; Eileen Seymour | 5h | 803 |
| 179 | 1.3.1.2.2.1.3 | Weekly Staff Meeting 3 | 1h | 2021-08-03 08:00 | 2021-08-03 09:00 |  | 70.38d | start no earlier than 2021-08-03 08:00 | Oshoriame Olorife; Gerald Hasper; Shravani Sinha; Stephanie Williams; Company Lunches; Eileen Seymour | 5h | 803 |
| 180 | 1.3.1.2.2.1.4 | Weekly Staff Meeting 4 | 1h | 2021-08-10 08:00 | 2021-08-10 09:00 |  | 65.38d | start no earlier than 2021-08-10 08:00 | Oshoriame Olorife; Gerald Hasper; Shravani Sinha; Stephanie Williams; Company Lunches; Eileen Seymour | 5h | 803 |
| 181 | 1.3.1.2.2.1.5 | Weekly Staff Meeting 5 | 1h | 2021-08-17 08:00 | 2021-08-17 09:00 |  | 60.38d | start no earlier than 2021-08-17 08:00 | Oshoriame Olorife; Gerald Hasper; Shravani Sinha; Stephanie Williams; Company Lunches; Eileen Seymour | 5h | 803 |
| 182 | 1.3.1.2.2.1.6 | Weekly Staff Meeting 6 | 1h | 2021-08-24 08:00 | 2021-08-24 09:00 |  | 55.38d | start no earlier than 2021-08-24 08:00 | Oshoriame Olorife; Gerald Hasper; Shravani Sinha; Stephanie Williams; Company Lunches; Eileen Seymour | 5h | 803 |
| 183 | 1.3.1.2.2.1.7 | Weekly Staff Meeting 7 | 1h | 2021-08-31 08:00 | 2021-08-31 09:00 |  | 50.38d | start no earlier than 2021-08-31 08:00 | Oshoriame Olorife; Gerald Hasper; Shravani Sinha; Stephanie Williams; Company Lunches; Eileen Seymour | 5h | 803 |
| 184 | 1.3.1.2.2.1.8 | Weekly Staff Meeting 8 | 1h | 2021-09-07 08:00 | 2021-09-07 09:00 |  | 46.38d | start no earlier than 2021-09-07 08:00 | Oshoriame Olorife; Gerald Hasper; Shravani Sinha; Stephanie Williams; Company Lunches; Eileen Seymour | 5h | 803 |
| 185 | 1.3.1.2.2.1.9 | Weekly Staff Meeting 9 | 1h | 2021-09-14 08:00 | 2021-09-14 09:00 |  | 41.38d | start no earlier than 2021-09-14 08:00 | Oshoriame Olorife; Gerald Hasper; Shravani Sinha; Stephanie Williams; Company Lunches; Eileen Seymour | 5h | 803 |
| 186 | 1.3.1.2.2.1.10 | Weekly Staff Meeting 10 | 1h | 2021-09-21 08:00 | 2021-09-21 09:00 |  | 36.38d | start no earlier than 2021-09-21 08:00 | Oshoriame Olorife; Gerald Hasper; Shravani Sinha; Stephanie Williams; Company Lunches; Eileen Seymour | 5h | 803 |
| 187 | 1.3.1.2.2.1.11 | Weekly Staff Meeting 11 | 1h | 2021-09-28 08:00 | 2021-09-28 09:00 |  | 31.38d | start no earlier than 2021-09-28 08:00 | Oshoriame Olorife; Gerald Hasper; Shravani Sinha; Stephanie Williams; Company Lunches; Eileen Seymour | 5h | 803 |
| 188 | 1.3.1.2.2.1.12 | Weekly Staff Meeting 12 | 1h | 2021-10-05 08:00 | 2021-10-05 09:00 |  | 26.38d | start no earlier than 2021-10-05 08:00 | Oshoriame Olorife; Eileen Seymour; Gerald Hasper; Stephanie Williams; Shravani Sinha; Company Lunches | 5h | 803 |
| 189 | 1.3.1.2.2.1.13 | Weekly Staff Meeting 13 | 1h | 2021-10-12 08:00 | 2021-10-12 09:00 |  | 22.38d | start no earlier than 2021-10-12 08:00 | Oshoriame Olorife; Eileen Seymour; Gerald Hasper; Stephanie Williams; Shravani Sinha; Company Lunches | 5h | 803 |
| 190 | 1.3.2 | **Drone Testing** | 59d | 2021-07-16 13:00 | 2021-10-08 12:00 |  | 0d |  | Drone Maintenance | 590h | 71,684 |
| 191 | 1.3.2.1 | **Flight** | 49d | 2021-07-16 13:00 | 2021-09-24 12:00 |  | 0d |  |  | 490h | 42,924 |
| 192 | 1.3.2.1.1 | **Drone Takeoff** | 15d | 2021-07-16 13:00 | 2021-08-06 12:00 |  | 0d |  |  | 150h | 13,140 |
| 193 | 1.3.2.1.1.1 | Test drone takeoff at DroneTech | 5d | 2021-07-16 13:00 | 2021-07-23 12:00 | 150, 159 | 0d |  | Anthony Noto; Gerald Hasper [25%] | 50h | 4,380 |
| 194 | 1.3.2.1.1.2 | Test drone takeoff in field | 10d | 2021-07-23 13:00 | 2021-08-06 12:00 | 193 | 0d |  | Anthony Noto; Gerald Hasper [25%] | 100h | 8,760 |

| ID | WBS | Task | Duration | Start | Finish | Predecessors | Total slack | Free slack | Resources | Work | Cost |
| --- | --- | --- | --- | --- | --- | --- | --- | --- | --- | --- | --- |
| 195 | 1.3.2.1.2 | **Weather Simulation** | 15d | 2021-08-06 13:00 | 2021-08-27 12:00 |  | 0d |  |  | 150h | 13,140 |
| 196 | 1.3.2.1.2.1 | Simulate rainy & windy flight at DroneTech | 10d | 2021-08-06 13:00 | 2021-08-20 12:00 | 194 | 0d |  | Anthony Noto; Gerald Hasper [25%] | 100h | 8,760 |
| 197 | 1.3.2.1.2.2 | Fly drone in field on rainy day | 5d | 2021-08-20 13:00 | 2021-08-27 12:00 | 196 | 0d |  | Anthony Noto; Gerald Hasper [25%] | 50h | 4,380 |
| 198 | 1.3.2.1.3 | **Geographical Constraints** | 19d | 2021-08-27 13:00 | 2021-09-24 12:00 |  | 0d |  |  | 190h | 16,644 |
| 199 | 1.3.2.1.3.1 | Flight with obstructions at DroneTech | 5d | 2021-08-27 13:00 | 2021-09-03 12:00 | 197 | 0d |  | Anthony Noto; Gerald Hasper [25%] | 50h | 4,380 |
| 200 | 1.3.2.1.3.2 | Simulate flight in urban region of Gainesville | 14d | 2021-09-03 13:00 | 2021-09-24 12:00 | 199 | 0d |  | Anthony Noto; Gerald Hasper [25%] | 140h | 12,264 |
| 201 | 1.3.2.2 | **Package Delivery** | 10d | 2021-09-24 13:00 | 2021-10-08 12:00 |  | 0d |  |  | 100h | 8,760 |
| 202 | 1.3.2.2.1 | **Successful Delivery** | 5d | 2021-09-24 13:00 | 2021-10-01 12:00 |  | 0d |  |  | 50h | 4,380 |
| 203 | 1.3.2.2.1.1 | Test flight at DroneTech, measure dropoff accuracy | 5d | 2021-09-24 13:00 | 2021-10-01 12:00 | 200 | 0d |  | Anthony Noto; Gerald Hasper [25%] | 50h | 4,380 |
| 204 | 1.3.2.2.2 | **Integrity of Product Delivered** | 5d | 2021-10-01 13:00 | 2021-10-08 12:00 |  | 0d |  |  | 50h | 4,380 |
| 205 | 1.3.2.2.2.1 | Test flight at DroneTech, investigate product integrity | 5d | 2021-10-01 13:00 | 2021-10-08 12:00 | 203 | 0d |  | Anthony Noto; Gerald Hasper [25%] | 50h | 4,380 |
| 206 | 1.3.3 | **App Testing** | 45d | 2021-07-16 13:00 | 2021-09-20 12:00 |  | 14d |  |  | 432h | 38,880 |
| 207 | 1.3.3.1 | **User Interface** | 15d | 2021-07-16 13:00 | 2021-08-06 12:00 |  | 14d |  |  | 144h | 12,960 |
| 208 | 1.3.3.1.1 | **Ordering** | 5d | 2021-07-16 13:00 | 2021-07-23 12:00 |  | 14d |  |  | 48h | 4,320 |
| 209 | 1.3.3.1.1.1 | Perform test order | 5d | 2021-07-16 13:00 | 2021-07-23 12:00 | 150, 159 | 14d | 0d | Eileen Seymour [10%]; Shravani Sinha [10%]; Samrudh Untgod Preetham | 48h | 4,320 |
| 210 | 1.3.3.1.2 | **Drone Preference** | 5d | 2021-07-23 13:00 | 2021-07-30 12:00 |  | 14d |  |  | 48h | 4,320 |
| 211 | 1.3.3.1.2.1 | Perform test drone opt-in | 5d | 2021-07-23 13:00 | 2021-07-30 12:00 | 209 | 14d | 0d | Eileen Seymour [10%]; Shravani Sinha [10%]; Samrudh Untgod Preetham | 48h | 4,320 |
| 212 | 1.3.3.1.3 | **Address Approval** | 3d | 2021-07-30 13:00 | 2021-08-04 12:00 |  | 14d |  |  | 28.8h | 2,592 |
| 213 | 1.3.3.1.3.1 | Perform test address input | 3d | 2021-07-30 13:00 | 2021-08-04 12:00 | 211 | 14d | 0d | Eileen Seymour [10%]; Shravani Sinha [10%]; Samrudh Untgod Preetham | 28.8h | 2,592 |
| 214 | 1.3.3.1.4 | **Order Confirmation** | 2d | 2021-08-04 13:00 | 2021-08-06 12:00 |  | 14d |  |  | 19.2h | 1,728 |
| 215 | 1.3.3.1.4.1 | Finish test order, receive confirmation | 2d | 2021-08-04 13:00 | 2021-08-06 12:00 | 213 | 14d | 0d | Eileen Seymour [10%]; Shravani Sinha [10%]; Samrudh Untgod Preetham | 19.2h | 1,728 |
| 216 | 1.3.3.2 | **Wilmont's Interface** | 30d | 2021-08-06 13:00 | 2021-09-20 12:00 |  | 14d |  |  | 288h | 25,920 |
| 217 | 1.3.3.2.1 | Perform test with Wilmont's on order receival | 15d | 2021-08-06 13:00 | 2021-08-27 12:00 | 215 | 14d | 0d | Eileen Seymour [10%]; Shravani Sinha [10%]; Samrudh Untgod Preetham | 144h | 12,960 |
| 218 | 1.3.3.2.2 | Perform test with Wilmont's on order transmittal | 15d | 2021-08-27 13:00 | 2021-09-20 12:00 | 217 | 14d |  | Eileen Seymour [10%]; Shravani Sinha [10%]; Samrudh Untgod Preetham | 144h | 12,960 |

| ID | WBS | Task | Duration | Start | Finish | Predecessors | Total slack | Free slack | Constraint | Resources | Work | Cost |
| --- | --- | --- | --- | --- | --- | --- | --- | --- | --- | --- | --- | --- |
| 219 | 1.4 | **Implement** | 23d | 2021-10-08 13:00 | 2021-11-12 12:00 |  | 0d |  |  |  | 1892h | 41,687 |
| 220 | 1.4.1 | **Project Mgmt.** | 22.75d | 2021-10-08 13:00 | 2021-11-12 10:00 |  | 0d |  |  |  | 124h | 15,447 |
| 221 | 1.4.1.1 | **Client** | 22.75d | 2021-10-08 13:00 | 2021-11-12 10:00 |  | 0d |  |  |  | 76h | 9,283 |
| 222 | 1.4.1.1.1 | **Communications** | 19.25d | 2021-10-15 08:00 | 2021-11-12 10:00 |  | 0.25d |  |  | Travel - Flight (Wilmont's PMs) | 12h | 2,720 |
| 223 | 1.4.1.1.1.1 | **Biweekly Client Meeting** | 19.25d | 2021-10-15 08:00 | 2021-11-12 10:00 | 205, 218 | 0.25d |  |  |  | 12h | 870 |
| 224 | 1.4.1.1.1.1.1 | Biweekly Client Meeting 1 | 2h | 2021-10-15 08:00 | 2021-10-15 10:00 |  | 19.25d |  | start no earlier than 2021-10-15 08:00 | George Cranston; Oshoriame Olorife | 4h | 290 |
| 225 | 1.4.1.1.1.1.2 | Biweekly Client Meeting 2 | 2h | 2021-10-29 08:00 | 2021-10-29 10:00 |  | 9.25d |  | start no earlier than 2021-10-29 08:00 | George Cranston; Oshoriame Olorife | 4h | 290 |
| 226 | 1.4.1.1.1.1.3 | Biweekly Client Meeting 3 | 2h | 2021-11-12 08:00 | 2021-11-12 10:00 |  | 0.25d |  | start no earlier than 2021-11-12 08:00 | George Cranston; Oshoriame Olorife | 4h | 290 |
| 227 | 1.4.1.1.2 | **Approval** | 2d | 2021-10-08 13:00 | 2021-10-13 12:00 |  | 0d |  |  | Travel - Flight (George Cranston) | 64h | 6,563 |
| 228 | 1.4.1.1.2.1 | Obtain approval of App | 2d | 2021-10-08 13:00 | 2021-10-13 12:00 | 218, 205 | 14d | 10d |  | Jordan Kempler [50%]; George Cranston [50%]; James Connor [50%]; Oshoriame Olorife [50%] | 32h | 3,160 |
| 229 | 1.4.1.1.2.2 | Obtain approval of Prototype Drones | 2d | 2021-10-08 13:00 | 2021-10-13 12:00 | 218, 205 | 0d |  |  | Jordan Kempler [50%]; George Cranston [50%]; James Connor [50%]; Oshoriame Olorife [50%] | 32h | 3,160 |
| 230 | 1.4.1.2 | **Team** | 15.25d | 2021-10-18 08:00 | 2021-11-08 10:00 |  | 3.25d |  |  |  | 48h | 6,164 |
| 231 | 1.4.1.2.1 | **Staff** | 0.5d | 2021-11-03 08:00 | 2021-11-03 12:00 |  | 6d |  |  |  | 8h | 940 |
| 232 | 1.4.1.2.1.1 | **Quarterly Staff Evaluation** | 0.5d | 2021-11-03 08:00 | 2021-11-03 12:00 | 218, 205 | 6d |  |  |  | 8h | 940 |
| 233 | 1.4.1.2.1.1.1 | Quarterly Staff Evaluation 1 | 4h | 2021-11-03 08:00 | 2021-11-03 12:00 |  | 6d |  | start no earlier than 2021-11-03 08:00 | Oshoriame Olorife; Teresa Ng [25%]; Samrudh Untgod Preetham [25%]; Margy Orozco [25%]; Remi Dijon [25%] | 8h | 940 |
| 234 | 1.4.1.2.2 | **Communications** | 15.25d | 2021-10-18 08:00 | 2021-11-08 10:00 |  | 3.25d |  |  |  | 40h | 5,224 |
| 235 | 1.4.1.2.2.1 | **Weekly Staff Meeting** | 15.25d | 2021-10-18 08:00 | 2021-11-08 10:00 | 218, 205 | 3.25d |  |  |  | 40h | 5,224 |
| 236 | 1.4.1.2.2.1.1 | Weekly Staff Meeting 1 | 2h | 2021-10-18 08:00 | 2021-10-18 10:00 |  | 18.25d |  | start no earlier than 2021-10-18 08:00 | Eileen Seymour; Gerald Hasper; Oshoriame Olorife; Shravani Sinha; Stephanie Williams; Company Lunches | 10h | 1,306 |
| 237 | 1.4.1.2.2.1.2 | Weekly Staff Meeting 2 | 2h | 2021-10-25 08:00 | 2021-10-25 10:00 |  | 13.25d |  | start no earlier than 2021-10-25 08:00 | Eileen Seymour; Gerald Hasper; Oshoriame Olorife; Shravani Sinha; Stephanie Williams; Company Lunches | 10h | 1,306 |
| 238 | 1.4.1.2.2.1.3 | Weekly Staff Meeting 3 | 2h | 2021-11-01 08:00 | 2021-11-01 10:00 |  | 8.25d |  | start no earlier than 2021-11-01 08:00 | Eileen Seymour; Gerald Hasper; Oshoriame Olorife; Shravani Sinha; Stephanie Williams; Company Lunches | 10h | 1,306 |
| 239 | 1.4.1.2.2.1.4 | Weekly Staff Meeting 4 | 2h | 2021-11-08 08:00 | 2021-11-08 10:00 |  | 3.25d |  | start no earlier than 2021-11-08 08:00 | Eileen Seymour; Gerald Hasper; Oshoriame Olorife; Shravani Sinha; Stephanie Williams; Company Lunches | 10h | 1,306 |
| 240 | 1.4.2 | **Drone Implementation** | 14d | 2021-10-13 13:00 | 2021-11-02 12:00 |  | 0d |  |  |  | 1144h | 16,040 |
| 241 | 1.4.2.1 | **Pharmacy** | 14d | 2021-10-13 13:00 | 2021-11-02 12:00 |  | 0d |  |  | Travel - DroneTech Gas Weekly | 616h | 9,500 |
| 242 | 1.4.2.1.1 | **Training on drone use** | 14d | 2021-10-13 13:00 | 2021-11-02 12:00 |  | 0d |  |  |  | 616h | 9,440 |
| 243 | 1.4.2.1.1.1 | Providing prototypes to pharmacies | 2d | 2021-10-13 13:00 | 2021-10-15 12:00 | 229 | 0d |  |  | Ashish Nehra; Julie Green; Steve Haskell; James O'Donnell; Wilma Marcy; Johnathan Perry [50%] | 88h | 800 |
| 244 | 1.4.2.1.1.2 | Briefing on drone handling | 2d | 2021-10-15 13:00 | 2021-10-19 12:00 | 243 | 0d |  |  | Anthony Noto; Julie Green; Steve Haskell; James O'Donnell; Wilma Marcy; Johnathan Perry [50%] | 88h | 1,440 |
| 245 | 1.4.2.1.1.3 | Interactive Drone Training | 10d | 2021-10-19 13:00 | 2021-11-02 12:00 | 244 | 0d |  |  | Anthony Noto; Julie Green; Steve Haskell; James O'Donnell; Wilma Marcy; Johnathan Perry [50%] | 440h | 7,200 |

| ID | WBS | Task | Duration | Start | Finish | Predecessors | Total slack | Free slack | Resources | Work | Cost |
| --- | --- | --- | --- | --- | --- | --- | --- | --- | --- | --- | --- |
| 246 | 1.4.2.2 | **Wilmont's** | 10d | 2021-10-13 13:00 | 2021-10-27 12:00 |  | 4d |  | Travel - DroneTech Gas Weekly | 528h | 6,540 |
| 247 | 1.4.2.2.1 | Provide documentation on operation of drones | 1d | 2021-10-13 13:00 | 2021-10-14 12:00 | 229 | 5d | 1d | Samrudh Untgod Preetham; Shirley Johnson | 16h | 720 |
| 248 | 1.4.2.2.2 | Interactive virtual workshop on operation of drones | 5d | 2021-10-15 13:00 | 2021-10-22 12:00 | 243, 247 | 4d | 0d | Samrudh Untgod Preetham; Shirley Johnson; William Scott; Mary Pearson; Linda Thornton; Gerald Peritoni; Elizabeth Walton; Phillip Greenberg | 320h | 3,600 |
| 249 | 1.4.2.2.3 | Providing information on repairs & maintenance | 1d | 2021-10-22 13:00 | 2021-10-25 12:00 | 248 | 4d | 0d | Samrudh Untgod Preetham; Shirley Johnson; William Scott; Mary Pearson; Linda Thornton; Gerald Peritoni; Elizabeth Walton; Phillip Greenberg | 64h | 720 |
| 250 | 1.4.2.2.4 | Interactive virtual workshops on repair & maintenance | 2d | 2021-10-25 13:00 | 2021-10-27 12:00 | 249 | 4d | 0d | Samrudh Untgod Preetham; Shirley Johnson; William Scott; Mary Pearson; Linda Thornton; Gerald Peritoni; Elizabeth Walton; Phillip Greenberg | 128h | 1,440 |
| 251 | 1.4.3 | **App Implementation** | 11d | 2021-10-27 13:00 | 2021-11-12 12:00 |  | 0d |  |  | 624h | 10,200 |
| 252 | 1.4.3.1 | **Pharmacy Staff** | 6d | 2021-11-02 13:00 | 2021-11-10 12:00 |  | 0d |  | Travel - DroneTech Gas Weekly | 264h | 4,380 |
| 253 | 1.4.3.1.1 | **Training Pharmacy Staff on app use** | 5d | 2021-11-02 13:00 | 2021-11-09 12:00 |  | 0d |  |  | 220h | 3,600 |
| 254 | 1.4.3.1.1.1 | Organizing interactive app training workshops | 1d | 2021-11-02 13:00 | 2021-11-03 12:00 | 228, 245 | 0d |  | Anthony Noto; Julie Green; Steve Haskell; James O'Donnell; Wilma Marcy; Johnathan Perry [50%] | 44h | 720 |
| 255 | 1.4.3.1.1.2 | Training pharmacy staff on information transfer | 4d | 2021-11-03 13:00 | 2021-11-09 12:00 | 254 | 0d |  | Anthony Noto; Julie Green; Steve Haskell; James O'Donnell; Wilma Marcy; Johnathan Perry [50%] | 176h | 2,880 |
| 256 | 1.4.3.1.2 | **Provide documentation to pharmacy** | 1d | 2021-11-09 13:00 | 2021-11-10 12:00 |  | 0d |  |  | 44h | 720 |
| 257 | 1.4.3.1.2.1 | Do's and Dont's | 1d | 2021-11-09 13:00 | 2021-11-10 12:00 | 255 | 0d |  | Anthony Noto; Julie Green; Steve Haskell; James O'Donnell; Wilma Marcy; Johnathan Perry [50%] | 44h | 720 |
| 258 | 1.4.3.2 | **Wilmont's Staff** | 11d | 2021-10-27 13:00 | 2021-11-12 12:00 |  | 0d |  | Travel - DroneTech Gas Weekly | 360h | 5,820 |
| 259 | 1.4.3.2.1 | **Training Wilmont's Staff on app use** | 6d | 2021-10-27 13:00 | 2021-11-04 12:00 |  | 4d |  |  | 296h | 4,320 |
| 260 | 1.4.3.2.1.1 | Providing Wilmont staff with documentation on app operation | 1d | 2021-10-27 13:00 | 2021-10-28 12:00 | 250, 228 | 4d | 0d | Samrudh Untgod Preetham; Shirley Johnson | 16h | 720 |
| 261 | 1.4.3.2.1.2 | Training Wilmont's staff on information transfer to DroneTech | 5d | 2021-10-28 13:00 | 2021-11-04 12:00 | 260 | 4d |  | Samrudh Untgod Preetham; Shirley Johnson; William Scott; Mary Pearson; Linda Thornton; Gerald Peritoni; Elizabeth Walton | 280h | 3,600 |
| 262 | 1.4.3.2.2 | **Making Wilmont's app update available** | 1d | 2021-11-10 13:00 | 2021-11-12 12:00 |  | 0d |  | Samrudh Untgod Preetham; Shirley Johnson; William Scott; Mary Pearson; Linda Thornton; Gerald Peritoni; Elizabeth Walton | 64h | 1,440 |
| 263 | 1.4.3.2.2.1 | Submitting final app update to App Store/Google Store. | 1d | 2021-11-10 13:00 | 2021-11-12 12:00 | 261, 257 | 0d |  | Margy Orozco | 8h | 720 |
