# Module 10

Schedule from MS Project, 2021-01-05 to 2021-11-17.
University of Florida

## Calendars

- Standard: Mon-Fri 08:00-12:00, 13:00-17:00; Sat-Sun off. Exceptions (off unless hours are given): 2021-01-18 (Martin Luther King Jr. Day), 2021-02-15 (President's Day), 2021-05-31 (Memorial Day), 2021-07-04 to 2021-07-05 (Independence Day), 2021-09-06 (Labor Day), 2021-10-11 (Columbus Day), 2021-11-11 (Veterans Day).

## Resources

| Resource |
| --- |
| 110 |

## Schedule

| ID | WBS | Task | Duration | Start | Finish | Predecessors | Total slack | Constraint |
| --- | --- | --- | --- | --- | --- | --- | --- | --- |
| 1 | 1 | **DELIVERYMEDS** | 220d | 2021-01-05 08:00 | 2021-11-17 17:00 |  | 0d |  |
| 3 | 1.1 | **Design** | 72d | 2021-01-05 08:00 | 2021-04-16 17:00 |  | 0d |  |
| 4 | 1.1.1 | **Project Mgmt.** | 71.25d | 2021-01-05 08:00 | 2021-04-16 10:00 |  | 0d |  |
| 5 | 1.1.1.1 | **Client** | 71.25d | 2021-01-05 08:00 | 2021-04-16 10:00 |  | 0d |  |
| 6 | 1.1.1.1.1 | **Contract** | 11d | 2021-01-05 08:00 | 2021-01-20 17:00 |  | 0d |  |
| 7 | 1.1.1.1.1.1 | Identifying Scope | 2d | 2021-01-05 08:00 | 2021-01-06 17:00 |  | 0d |  |
| 8 | 1.1.1.1.1.2 | Creating Budget | 2d | 2021-01-07 08:00 | 2021-01-08 17:00 | 7 | 0d |  |
| 9 | 1.1.1.1.1.3 | Creating Timeline | 2d | 2021-01-11 08:00 | 2021-01-12 17:00 | 8 | 0d |  |
| 10 | 1.1.1.1.1.4 | Create Indemnification/Liability Clauses | 1d | 2021-01-13 08:00 | 2021-01-13 17:00 | 9, 39, 40 | 0d |  |
| 11 | 1.1.1.1.1.5 | Finalize Contract | 4d | 2021-01-14 08:00 | 2021-01-20 17:00 | 10 | 0d |  |
| 12 | 1.1.1.1.2 | **Communications** | 59.25d | 2021-01-22 08:00 | 2021-04-16 10:00 |  | 148.75d |  |
| 13 | 1.1.1.1.2.1 | **Biweekly Client Meeting** | 59.25d | 2021-01-22 08:00 | 2021-04-16 10:00 | 11 | 148.75d |  |
| 14 | 1.1.1.1.2.1.1 | Biweekly Client Meeting 1 | 2h | 2021-01-22 08:00 | 2021-01-22 10:00 |  | 207.75d | start no earlier than 2021-01-22 08:00 |
| 15 | 1.1.1.1.2.1.2 | Biweekly Client Meeting 2 | 2h | 2021-02-05 08:00 | 2021-02-05 10:00 |  | 197.75d | start no earlier than 2021-02-05 08:00 |
| 16 | 1.1.1.1.2.1.3 | Biweekly Client Meeting 3 | 2h | 2021-02-19 08:00 | 2021-02-19 10:00 |  | 188.75d | start no earlier than 2021-02-19 08:00 |
| 17 | 1.1.1.1.2.1.4 | Biweekly Client Meeting 4 | 2h | 2021-03-05 08:00 | 2021-03-05 10:00 |  | 178.75d | start no earlier than 2021-03-05 08:00 |
| 18 | 1.1.1.1.2.1.5 | Biweekly Client Meeting 5 | 2h | 2021-03-19 08:00 | 2021-03-19 10:00 |  | 168.75d | start no earlier than 2021-03-19 08:00 |
| 19 | 1.1.1.1.2.1.6 | Biweekly Client Meeting 6 | 2h | 2021-04-02 08:00 | 2021-04-02 10:00 |  | 158.75d | start no earlier than 2021-04-02 08:00 |
| 20 | 1.1.1.1.2.1.7 | Biweekly Client Meeting 7 | 2h | 2021-04-16 08:00 | 2021-04-16 10:00 |  | 148.75d | start no earlier than 2021-04-16 08:00 |
| 21 | 1.1.1.2 | **Team** | 56.25d | 2021-01-21 08:00 | 2021-04-12 10:00 |  | 0d |  |
| 22 | 1.1.1.2.1 | **Staff** | 5d | 2021-01-21 08:00 | 2021-01-27 17:00 |  | 0d |  |
| 23 | 1.1.1.2.1.1 | Select Team | 3d | 2021-01-21 08:00 | 2021-01-25 17:00 | 11 | 0d |  |
| 24 | 1.1.1.2.1.2 | Team Building Exercises | 2d | 2021-01-26 08:00 | 2021-01-27 17:00 | 23 | 0d |  |
| 25 | 1.1.1.2.2 | **Communications** | 49.25d | 2021-02-01 08:00 | 2021-04-12 10:00 |  | 152.75d |  |
| 26 | 1.1.1.2.2.1 | **Weekly Staff Meetings** | 49.25d | 2021-02-01 08:00 | 2021-04-12 10:00 | 24 | 152.75d |  |
| 27 | 1.1.1.2.2.1.1 | Weekly Staff Meetings 1 | 2h | 2021-02-01 08:00 | 2021-02-01 10:00 |  | 201.75d | start no earlier than 2021-02-01 08:00 |
| 28 | 1.1.1.2.2.1.2 | Weekly Staff Meetings 2 | 2h | 2021-02-08 08:00 | 2021-02-08 10:00 |  | 196.75d | start no earlier than 2021-02-08 08:00 |
| 29 | 1.1.1.2.2.1.3 | Weekly Staff Meetings 3 | 2h | 2021-02-22 08:00 | 2021-02-22 10:00 |  | 187.75d | start no earlier than 2021-02-22 08:00 |
| 30 | 1.1.1.2.2.1.4 | Weekly Staff Meetings 4 | 2h | 2021-03-01 08:00 | 2021-03-01 10:00 |  | 182.75d | start no earlier than 2021-03-01 08:00 |
| 31 | 1.1.1.2.2.1.5 | Weekly Staff Meetings 5 | 2h | 2021-03-08 08:00 | 2021-03-08 10:00 |  | 177.75d | start no earlier than 2021-03-08 08:00 |
| 32 | 1.1.1.2.2.1.6 | Weekly Staff Meetings 6 | 2h | 2021-03-15 08:00 | 2021-03-15 10:00 |  | 172.75d | start no earlier than 2021-03-15 08:00 |
| 33 | 1.1.1.2.2.1.7 | Weekly Staff Meetings 7 | 2h | 2021-03-22 08:00 | 2021-03-22 10:00 |  | 167.75d | start no earlier than 2021-03-22 08:00 |
| 34 | 1.1.1.2.2.1.8 | Weekly Staff Meetings 8 | 2h | 2021-03-29 08:00 | 2021-03-29 10:00 |  | 162.75d | start no earlier than 2021-03-29 08:00 |
| 35 | 1.1.1.2.2.1.9 | Weekly Staff Meetings 9 | 2h | 2021-04-05 08:00 | 2021-04-05 10:00 |  | 157.75d | start no earlier than 2021-04-05 08:00 |
| 36 | 1.1.1.2.2.1.10 | Weekly Staff Meetings 10 | 2h | 2021-04-12 08:00 | 2021-04-12 10:00 |  | 152.75d | start no earlier than 2021-04-12 08:00 |

| ID | WBS | Task | Duration | Start | Finish | Predecessors | Total slack | Free slack |
| --- | --- | --- | --- | --- | --- | --- | --- | --- |
| 37 | 1.1.1.3 | **Project** | 3d | 2021-01-07 08:00 | 2021-01-11 17:00 |  | 1d |  |
| 38 | 1.1.1.3.1 | **Risk Assessment** | 3d | 2021-01-07 08:00 | 2021-01-11 17:00 |  | 1d |  |
| 39 | 1.1.1.3.1.1 | Perform Risk Register | 3d | 2021-01-07 08:00 | 2021-01-11 17:00 | 7 | 1d |  |
| 40 | 1.1.1.3.1.2 | Establish Contingency Plans | 2d | 2021-01-07 08:00 | 2021-01-08 17:00 | 7 | 2d |  |
| 41 | 1.1.2 | **Drone Requirements** | 56d | 2021-01-28 08:00 | 2021-04-16 17:00 |  | 0d |  |
| 42 | 1.1.2.1 | **Permitting** | 3d | 2021-01-28 08:00 | 2021-02-01 17:00 |  | 53d |  |
| 43 | 1.1.2.1.1 | **FAA** | 3d | 2021-01-28 08:00 | 2021-02-01 17:00 |  | 53d |  |
| 44 | 1.1.2.1.1.1 | Regulatory Research | 1d | 2021-01-28 08:00 | 2021-01-28 17:00 | 11, 24 | 54d | 1d |
| 45 | 1.1.2.1.1.2 | Permitting Documentation | 2d | 2021-01-28 08:00 | 2021-01-29 17:00 | 11, 24 | 53d | 0d |
| 46 | 1.1.2.1.1.3 | Meeting with FAA Representatives | 1d | 2021-02-01 08:00 | 2021-02-01 17:00 | 44, 45 | 53d |  |
| 47 | 1.1.2.2 | **Packaging** | 56d | 2021-01-28 08:00 | 2021-04-16 17:00 |  | 0d |  |
| 48 | 1.1.2.2.1 | **Bubble Wrapping** | 45d | 2021-01-28 08:00 | 2021-04-01 17:00 |  | 8d |  |
| 49 | 1.1.2.2.1.1 | Design Bubble Wrapping System | 45d | 2021-01-28 08:00 | 2021-04-01 17:00 | 11, 24 | 8d |  |
| 50 | 1.1.2.2.2 | **Temperature Control** | 53d | 2021-01-28 08:00 | 2021-04-13 17:00 |  | 0d |  |
| 51 | 1.1.2.2.2.1 | Design Temperature Control System | 53d | 2021-01-28 08:00 | 2021-04-13 17:00 | 11, 24 | 0d |  |
| 52 | 1.1.2.2.3 | **Size and Weight Constraints** | 3d | 2021-04-14 08:00 | 2021-04-16 17:00 |  | 0d |  |
| 53 | 1.1.2.2.3.1 | Calculate maximum size and weight allowed | 3d | 2021-04-14 08:00 | 2021-04-16 17:00 | 49, 51 | 0d |  |
| 54 | 1.1.3 | **Tech** | 55d | 2021-01-28 08:00 | 2021-04-15 17:00 |  | 6d |  |
| 55 | 1.1.3.1 | **App & Interface** | 20d | 2021-01-28 08:00 | 2021-02-25 17:00 |  | 6d |  |
| 56 | 1.1.3.1.1 | **Design App Features** | 20d | 2021-01-28 08:00 | 2021-02-25 17:00 |  | 6d |  |
| 57 | 1.1.3.1.1.1 | Customer Order Algorithm | 3d | 2021-01-28 08:00 | 2021-02-01 17:00 | 11, 24 | 6d | 0d |
| 58 | 1.1.3.1.1.2 | Customer Preference (Delivery) Algorithm | 2d | 2021-02-02 08:00 | 2021-02-03 17:00 | 57 | 6d | 0d |
| 59 | 1.1.3.1.1.3 | Drone Request Algorithm | 2d | 2021-02-04 08:00 | 2021-02-05 17:00 | 58 | 6d | 0d |
| 60 | 1.1.3.1.1.4 | Order Confirmation Algorithm | 3d | 2021-02-08 08:00 | 2021-02-10 17:00 | 59 | 6d | 0d |
| 61 | 1.1.3.1.1.5 | Communication with Server Algorithm | 10d | 2021-02-11 08:00 | 2021-02-25 17:00 | 60 | 6d | 0d |

| ID | WBS | Task | Duration | Start | Finish | Predecessors | Total slack | Free slack | Constraint |
| --- | --- | --- | --- | --- | --- | --- | --- | --- | --- |
| 62 | 1.1.3.2 | **Security** | 45d | 2021-02-11 08:00 | 2021-04-15 17:00 |  | 16d |  |  |
| 63 | 1.1.3.2.1 | **HIPAA** | 15d | 2021-02-26 08:00 | 2021-03-18 17:00 |  | 6d |  |  |
| 64 | 1.1.3.2.1.1 | Design Code for Customer Identity Protection | 15d | 2021-02-26 08:00 | 2021-03-18 17:00 | 61 | 6d | 0d |  |
| 65 | 1.1.3.2.2 | **Wilmont's Business Information** | 45d | 2021-02-11 08:00 | 2021-04-15 17:00 |  | 31d |  |  |
| 66 | 1.1.3.2.2.1 | Design Algorithm for Wilmont's Business Information Protection | 15d | 2021-03-19 08:00 | 2021-04-08 17:00 | 64 | 6d |  |  |
| 67 | 1.1.3.2.2.2 | **Weekly Meeting with William Scott** | 45d | 2021-02-11 08:00 | 2021-04-15 17:00 | 11, 24 | 149d |  |  |
| 68 | 1.1.3.2.2.2.1 | Weekly Meeting with William Scott 1 | 1d | 2021-02-11 08:00 | 2021-02-11 17:00 |  | 193d |  | start no earlier than 2021-02-11 08:00 |
| 69 | 1.1.3.2.2.2.2 | Weekly Meeting with William Scott 2 | 1d | 2021-02-18 08:00 | 2021-02-18 17:00 |  | 189d |  | start no earlier than 2021-02-18 08:00 |
| 70 | 1.1.3.2.2.2.3 | Weekly Meeting with William Scott 3 | 1d | 2021-02-25 08:00 | 2021-02-25 17:00 |  | 184d |  | start no earlier than 2021-02-25 08:00 |
| 71 | 1.1.3.2.2.2.4 | Weekly Meeting with William Scott 4 | 1d | 2021-03-04 08:00 | 2021-03-04 17:00 |  | 179d |  | start no earlier than 2021-03-04 08:00 |
| 72 | 1.1.3.2.2.2.5 | Weekly Meeting with William Scott 5 | 1d | 2021-03-11 08:00 | 2021-03-11 17:00 |  | 174d |  | start no earlier than 2021-03-11 08:00 |
| 73 | 1.1.3.2.2.2.6 | Weekly Meeting with William Scott 6 | 1d | 2021-03-18 08:00 | 2021-03-18 17:00 |  | 169d |  | start no earlier than 2021-03-18 08:00 |
| 74 | 1.1.3.2.2.2.7 | Weekly Meeting with William Scott 7 | 1d | 2021-03-25 08:00 | 2021-03-25 17:00 |  | 164d |  | start no earlier than 2021-03-25 08:00 |
| 75 | 1.1.3.2.2.2.8 | Weekly Meeting with William Scott 8 | 1d | 2021-04-01 08:00 | 2021-04-01 17:00 |  | 159d |  | start no earlier than 2021-04-01 08:00 |
| 76 | 1.1.3.2.2.2.9 | Weekly Meeting with William Scott 9 | 1d | 2021-04-08 08:00 | 2021-04-08 17:00 |  | 154d |  | start no earlier than 2021-04-08 08:00 |
| 77 | 1.1.3.2.2.2.10 | Weekly Meeting with William Scott 10 | 1d | 2021-04-15 08:00 | 2021-04-15 17:00 |  | 149d |  | start no earlier than 2021-04-15 08:00 |
| 78 | 1.2 | **Build** | 63d | 2021-04-19 08:00 | 2021-07-16 17:00 |  | 0d |  |  |
| 79 | 1.2.1 | **Project Mgmt.** | 63d | 2021-04-19 08:00 | 2021-07-16 17:00 |  | 85d |  |  |
| 80 | 1.2.1.1 | **Client** | 59d | 2021-04-23 08:00 | 2021-07-16 17:00 |  | 85d |  |  |
| 81 | 1.2.1.1.1 | **Communications** | 59d | 2021-04-23 08:00 | 2021-07-16 17:00 |  | 85d |  |  |
| 82 | 1.2.1.1.1.1 | **Biweekly Client Meeting** | 59d | 2021-04-23 08:00 | 2021-07-16 17:00 | 46, 53, 66 | 85d |  |  |
| 83 | 1.2.1.1.1.1.1 | Biweekly Client Meeting 1 | 1d | 2021-04-23 08:00 | 2021-04-23 17:00 |  | 143d |  | start no earlier than 2021-04-23 08:00 |
| 84 | 1.2.1.1.1.1.2 | Biweekly Client Meeting 2 | 1d | 2021-05-07 08:00 | 2021-05-07 17:00 |  | 133d |  | start no earlier than 2021-05-07 08:00 |
| 85 | 1.2.1.1.1.1.3 | Biweekly Client Meeting 3 | 1d | 2021-05-21 08:00 | 2021-05-21 17:00 |  | 123d |  | start no earlier than 2021-05-21 08:00 |
| 86 | 1.2.1.1.1.1.4 | Biweekly Client Meeting 4 | 1d | 2021-06-04 08:00 | 2021-06-04 17:00 |  | 114d |  | start no earlier than 2021-06-04 08:00 |
| 87 | 1.2.1.1.1.1.5 | Biweekly Client Meeting 5 | 1d | 2021-06-18 08:00 | 2021-06-18 17:00 |  | 104d |  | start no earlier than 2021-06-18 08:00 |
| 88 | 1.2.1.1.1.1.6 | Biweekly Client Meeting 6 | 1d | 2021-07-02 08:00 | 2021-07-02 17:00 |  | 94d |  | start no earlier than 2021-07-02 08:00 |
| 89 | 1.2.1.1.1.1.7 | Biweekly Client Meeting 7 | 1d | 2021-07-16 08:00 | 2021-07-16 17:00 |  | 85d |  | start no earlier than 2021-07-16 08:00 |

| ID | WBS | Task | Duration | Start | Finish | Predecessors | Total slack | Constraint |
| --- | --- | --- | --- | --- | --- | --- | --- | --- |
| 90 | 1.2.1.2 | **Team** | 62d | 2021-04-19 08:00 | 2021-07-15 17:00 |  | 86d |  |
| 91 | 1.2.1.2.1 | **Managing Test Staff** | 0.5d | 2021-05-05 08:00 | 2021-05-05 12:00 |  | 135.5d |  |
| 92 | 1.2.1.2.1.1 | **Quarterly Staff Evaluation** | 0.5d | 2021-05-05 08:00 | 2021-05-05 12:00 | 46, 53, 66 | 135.5d |  |
| 93 | 1.2.1.2.1.1.1 | Quarterly Staff Evaluation 1 | 0.5d | 2021-05-05 08:00 | 2021-05-05 12:00 |  | 135.5d | start no earlier than 2021-05-05 08:00 |
| 94 | 1.2.1.2.2 | **Quality Assurance** | 62d | 2021-04-19 08:00 | 2021-07-15 17:00 |  | 86d |  |
| 95 | 1.2.1.2.2.1 | **Weekly Cost Analysis Report** | 59d | 2021-04-22 08:00 | 2021-07-15 17:00 | 46, 53, 66 | 86d |  |
| 96 | 1.2.1.2.2.1.1 | Weekly Cost Analysis Report 1 | 1d | 2021-04-22 08:00 | 2021-04-22 17:00 |  | 144d | start no earlier than 2021-04-22 08:00 |
| 97 | 1.2.1.2.2.1.2 | Weekly Cost Analysis Report 2 | 1d | 2021-04-29 08:00 | 2021-04-29 17:00 |  | 139d | start no earlier than 2021-04-29 08:00 |
| 98 | 1.2.1.2.2.1.3 | Weekly Cost Analysis Report 3 | 1d | 2021-05-06 08:00 | 2021-05-06 17:00 |  | 134d | start no earlier than 2021-05-06 08:00 |
| 99 | 1.2.1.2.2.1.4 | Weekly Cost Analysis Report 4 | 1d | 2021-05-13 08:00 | 2021-05-13 17:00 |  | 129d | start no earlier than 2021-05-13 08:00 |
| 100 | 1.2.1.2.2.1.5 | Weekly Cost Analysis Report 5 | 1d | 2021-05-20 08:00 | 2021-05-20 17:00 |  | 124d | start no earlier than 2021-05-20 08:00 |
| 101 | 1.2.1.2.2.1.6 | Weekly Cost Analysis Report 6 | 1d | 2021-05-27 08:00 | 2021-05-27 17:00 |  | 119d | start no earlier than 2021-05-27 08:00 |
| 102 | 1.2.1.2.2.1.7 | Weekly Cost Analysis Report 7 | 1d | 2021-06-03 08:00 | 2021-06-03 17:00 |  | 115d | start no earlier than 2021-06-03 08:00 |
| 103 | 1.2.1.2.2.1.8 | Weekly Cost Analysis Report 8 | 1d | 2021-06-10 08:00 | 2021-06-10 17:00 |  | 110d | start no earlier than 2021-06-10 08:00 |
| 104 | 1.2.1.2.2.1.9 | Weekly Cost Analysis Report 9 | 1d | 2021-06-17 08:00 | 2021-06-17 17:00 |  | 105d | start no earlier than 2021-06-17 08:00 |
| 105 | 1.2.1.2.2.1.10 | Weekly Cost Analysis Report 10 | 1d | 2021-06-24 08:00 | 2021-06-24 17:00 |  | 100d | start no earlier than 2021-06-24 08:00 |
| 106 | 1.2.1.2.2.1.11 | Weekly Cost Analysis Report 11 | 1d | 2021-07-01 08:00 | 2021-07-01 17:00 |  | 95d | start no earlier than 2021-07-01 08:00 |
| 107 | 1.2.1.2.2.1.12 | Weekly Cost Analysis Report 12 | 1d | 2021-07-08 08:00 | 2021-07-08 17:00 |  | 91d | start no earlier than 2021-07-08 08:00 |
| 108 | 1.2.1.2.2.1.13 | Weekly Cost Analysis Report 13 | 1d | 2021-07-15 08:00 | 2021-07-15 17:00 |  | 86d | start no earlier than 2021-07-15 08:00 |
| 109 | 1.2.1.2.2.2 | **Weekly Staff Meeting** | 34.25d | 2021-04-19 08:00 | 2021-06-07 10:00 | 46, 53, 66 | 113.75d |  |
| 110 | 1.2.1.2.2.2.1 | Weekly Staff Meeting 1 | 2h | 2021-04-19 08:00 | 2021-04-19 10:00 |  | 147.75d | start no earlier than 2021-01-11 08:00 |
| 111 | 1.2.1.2.2.2.2 | Weekly Staff Meeting 2 | 2h | 2021-04-19 08:00 | 2021-04-19 10:00 |  | 147.75d | start no earlier than 2021-01-25 08:00 |
| 112 | 1.2.1.2.2.2.3 | Weekly Staff Meeting 3 | 2h | 2021-04-19 08:00 | 2021-04-19 10:00 |  | 147.75d | start no earlier than 2021-02-01 08:00 |
| 113 | 1.2.1.2.2.2.4 | Weekly Staff Meeting 4 | 2h | 2021-04-19 08:00 | 2021-04-19 10:00 |  | 147.75d | start no earlier than 2021-02-08 08:00 |
| 114 | 1.2.1.2.2.2.5 | Weekly Staff Meeting 5 | 2h | 2021-04-19 08:00 | 2021-04-19 10:00 |  | 147.75d | start no earlier than 2021-02-22 08:00 |
| 115 | 1.2.1.2.2.2.6 | Weekly Staff Meeting 6 | 2h | 2021-04-19 08:00 | 2021-04-19 10:00 |  | 147.75d | start no earlier than 2021-03-01 08:00 |
| 116 | 1.2.1.2.2.2.7 | Weekly Staff Meeting 7 | 2h | 2021-04-19 08:00 | 2021-04-19 10:00 |  | 147.75d | start no earlier than 2021-03-08 08:00 |
| 117 | 1.2.1.2.2.2.8 | Weekly Staff Meeting 8 | 2h | 2021-04-19 08:00 | 2021-04-19 10:00 |  | 147.75d | start no earlier than 2021-03-15 08:00 |
| 118 | 1.2.1.2.2.2.9 | Weekly Staff Meeting 9 | 2h | 2021-04-19 08:00 | 2021-04-19 10:00 |  | 147.75d | start no earlier than 2021-03-22 08:00 |
| 119 | 1.2.1.2.2.2.10 | Weekly Staff Meeting 10 | 2h | 2021-04-19 08:00 | 2021-04-19 10:00 |  | 147.75d | start no earlier than 2021-03-29 08:00 |
| 120 | 1.2.1.2.2.2.11 | Weekly Staff Meeting 11 | 2h | 2021-04-19 08:00 | 2021-04-19 10:00 |  | 147.75d | start no earlier than 2021-04-05 08:00 |
| 121 | 1.2.1.2.2.2.12 | Weekly Staff Meeting 12 | 2h | 2021-04-19 08:00 | 2021-04-19 10:00 |  | 147.75d | start no earlier than 2021-04-12 08:00 |
| 122 | 1.2.1.2.2.2.13 | Weekly Staff Meeting 13 | 2h | 2021-04-19 08:00 | 2021-04-19 10:00 |  | 147.75d | start no earlier than 2021-04-19 08:00 |
| 123 | 1.2.1.2.2.2.14 | Weekly Staff Meeting 14 | 2h | 2021-04-26 08:00 | 2021-04-26 10:00 |  | 142.75d | start no earlier than 2021-04-26 08:00 |
| 124 | 1.2.1.2.2.2.15 | Weekly Staff Meeting 15 | 2h | 2021-05-03 08:00 | 2021-05-03 10:00 |  | 137.75d | start no earlier than 2021-05-03 08:00 |
| 125 | 1.2.1.2.2.2.16 | Weekly Staff Meeting 16 | 2h | 2021-05-10 08:00 | 2021-05-10 10:00 |  | 132.75d | start no earlier than 2021-05-10 08:00 |
| 126 | 1.2.1.2.2.2.17 | Weekly Staff Meeting 17 | 2h | 2021-05-17 08:00 | 2021-05-17 10:00 |  | 127.75d | start no earlier than 2021-05-17 08:00 |
| 127 | 1.2.1.2.2.2.18 | Weekly Staff Meeting 18 | 2h | 2021-05-24 08:00 | 2021-05-24 10:00 |  | 122.75d | start no earlier than 2021-05-24 08:00 |
| 128 | 1.2.1.2.2.2.19 | Weekly Staff Meeting 19 | 2h | 2021-06-07 08:00 | 2021-06-07 10:00 |  | 113.75d | start no earlier than 2021-06-07 08:00 |

| ID | WBS | Task | Duration | Start | Finish | Predecessors | Total slack | Constraint |
| --- | --- | --- | --- | --- | --- | --- | --- | --- |
| 129 | 1.2.1.2.3 | **Quality Control** | 31.12d | 2021-04-19 08:00 | 2021-06-02 09:00 |  | 116.88d |  |
| 130 | 1.2.1.2.3.1 | **In-Progress Code Checks** | 31.12d | 2021-04-19 08:00 | 2021-06-02 09:00 | 46, 53, 66 | 116.88d |  |
| 131 | 1.2.1.2.3.1.1 | In-Progress Code Checks 1 | 1h | 2021-04-19 08:00 | 2021-04-19 09:00 |  | 147.88d | start no earlier than 2021-04-05 08:00 |
| 132 | 1.2.1.2.3.1.2 | In-Progress Code Checks 2 | 1h | 2021-04-19 08:00 | 2021-04-19 09:00 |  | 147.88d | start no earlier than 2021-04-07 08:00 |
| 133 | 1.2.1.2.3.1.3 | In-Progress Code Checks 3 | 1h | 2021-04-19 08:00 | 2021-04-19 09:00 |  | 147.88d | start no earlier than 2021-04-12 08:00 |
| 134 | 1.2.1.2.3.1.4 | In-Progress Code Checks 4 | 1h | 2021-04-19 08:00 | 2021-04-19 09:00 |  | 147.88d | start no earlier than 2021-04-14 08:00 |
| 135 | 1.2.1.2.3.1.5 | In-Progress Code Checks 5 | 1h | 2021-04-19 08:00 | 2021-04-19 09:00 |  | 147.88d | start no earlier than 2021-04-19 08:00 |
| 136 | 1.2.1.2.3.1.6 | In-Progress Code Checks 6 | 1h | 2021-04-21 08:00 | 2021-04-21 09:00 |  | 145.88d | start no earlier than 2021-04-21 08:00 |
| 137 | 1.2.1.2.3.1.7 | In-Progress Code Checks 7 | 1h | 2021-04-26 08:00 | 2021-04-26 09:00 |  | 142.88d | start no earlier than 2021-04-26 08:00 |
| 138 | 1.2.1.2.3.1.8 | In-Progress Code Checks 8 | 1h | 2021-04-28 08:00 | 2021-04-28 09:00 |  | 140.88d | start no earlier than 2021-04-28 08:00 |
| 139 | 1.2.1.2.3.1.9 | In-Progress Code Checks 9 | 1h | 2021-05-03 08:00 | 2021-05-03 09:00 |  | 137.88d | start no earlier than 2021-05-03 08:00 |
| 140 | 1.2.1.2.3.1.10 | In-Progress Code Checks 10 | 1h | 2021-05-05 08:00 | 2021-05-05 09:00 |  | 135.88d | start no earlier than 2021-05-05 08:00 |
| 141 | 1.2.1.2.3.1.11 | In-Progress Code Checks 11 | 1h | 2021-05-10 08:00 | 2021-05-10 09:00 |  | 132.88d | start no earlier than 2021-05-10 08:00 |
| 142 | 1.2.1.2.3.1.12 | In-Progress Code Checks 12 | 1h | 2021-05-12 08:00 | 2021-05-12 09:00 |  | 130.88d | start no earlier than 2021-05-12 08:00 |
| 143 | 1.2.1.2.3.1.13 | In-Progress Code Checks 13 | 1h | 2021-05-17 08:00 | 2021-05-17 09:00 |  | 127.88d | start no earlier than 2021-05-17 08:00 |
| 144 | 1.2.1.2.3.1.14 | In-Progress Code Checks 14 | 1h | 2021-05-19 08:00 | 2021-05-19 09:00 |  | 125.88d | start no earlier than 2021-05-19 08:00 |
| 145 | 1.2.1.2.3.1.15 | In-Progress Code Checks 15 | 1h | 2021-05-24 08:00 | 2021-05-24 09:00 |  | 122.88d | start no earlier than 2021-05-24 08:00 |
| 146 | 1.2.1.2.3.1.16 | In-Progress Code Checks 16 | 1h | 2021-05-26 08:00 | 2021-05-26 09:00 |  | 120.88d | start no earlier than 2021-05-26 08:00 |
| 147 | 1.2.1.2.3.1.17 | In-Progress Code Checks 17 | 1h | 2021-06-02 08:00 | 2021-06-02 09:00 |  | 116.88d | start no earlier than 2021-06-02 08:00 |
| 148 | 1.2.2 | **Drone Prototype** | 63d | 2021-04-19 08:00 | 2021-07-16 17:00 |  | 0d |  |
| 149 | 1.2.2.1 | **Additional Features** | 63d | 2021-04-19 08:00 | 2021-07-16 17:00 |  | 0d |  |
| 150 | 1.2.2.1.1 | **Bubble Wrapping** | 25d | 2021-04-19 08:00 | 2021-05-21 17:00 |  | 0d |  |
| 151 | 1.2.2.1.1.1 | Manufacture bubble wrapping parts | 21d | 2021-04-19 08:00 | 2021-05-17 17:00 | 46, 53, 66 | 0d |  |
| 152 | 1.2.2.1.1.2 | Install bubble wrapping parts | 4d | 2021-05-18 08:00 | 2021-05-21 17:00 | 151 | 30d |  |

| ID | WBS | Task | Duration | Start | Finish | Predecessors | Total slack | Free slack | Constraint |
| --- | --- | --- | --- | --- | --- | --- | --- | --- | --- |
| 153 | 1.2.2.1.2 | **Temperature Control** | 34d | 2021-05-18 08:00 | 2021-07-06 17:00 |  | 0d |  |  |
| 154 | 1.2.2.1.2.1 | Manufacture temperature control parts | 30d | 2021-05-18 08:00 | 2021-06-29 17:00 | 151 | 0d |  |  |
| 155 | 1.2.2.1.2.2 | Install temperature control parts | 4d | 2021-06-30 08:00 | 2021-07-06 17:00 | 154 | 0d |  |  |
| 156 | 1.2.2.1.3 | **Drone Finishes** | 8d | 2021-07-07 08:00 | 2021-07-16 17:00 |  | 0d |  |  |
| 157 | 1.2.2.1.3.1 | Painting prototype drones | 5d | 2021-07-07 08:00 | 2021-07-13 17:00 | 152, 155 | 0d |  |  |
| 158 | 1.2.2.1.3.2 | Applying logos on drones | 3d | 2021-07-14 08:00 | 2021-07-16 17:00 | 157 | 0d |  |  |
| 159 | 1.2.3 | **App Development** | 25d | 2021-04-19 08:00 | 2021-05-21 17:00 |  | 19d |  |  |
| 160 | 1.2.3.1 | Customer Order Coding | 5d | 2021-04-19 08:00 | 2021-04-23 17:00 | 46, 53, 66 | 19d | 0d |  |
| 161 | 1.2.3.2 | Customer Preference (Delivery) Coding | 2d | 2021-04-26 08:00 | 2021-04-27 17:00 | 160 | 19d | 0d |  |
| 162 | 1.2.3.3 | Drone Request Coding | 5d | 2021-04-28 08:00 | 2021-05-04 17:00 | 161 | 19d | 0d |  |
| 163 | 1.2.3.4 | Order Confirmation Coding | 1d | 2021-05-05 08:00 | 2021-05-05 17:00 | 162 | 19d | 0d |  |
| 164 | 1.2.3.5 | Communication with Server Coding | 12d | 2021-05-06 08:00 | 2021-05-21 17:00 | 163 | 19d | 0d |  |
| 165 | 1.2.4 | **Security** | 19d | 2021-05-24 08:00 | 2021-06-18 17:00 |  | 19d |  |  |
| 166 | 1.2.4.1 | Coding for Customer Identity Protection | 10d | 2021-05-24 08:00 | 2021-06-07 17:00 | 164 | 19d | 0d |  |
| 167 | 1.2.4.2 | Coding for Wilmont's Business Information Protection | 9d | 2021-06-08 08:00 | 2021-06-18 17:00 | 166 | 19d |  |  |
| 168 | 1.3 | **Test** | 59d | 2021-07-19 08:00 | 2021-10-08 17:00 |  | 0d |  |  |
| 169 | 1.3.1 | **Project Mgmt.** | 54.25d | 2021-07-19 08:00 | 2021-10-04 10:00 |  | 30.75d |  |  |
| 170 | 1.3.1.1 | **Client** | 49.25d | 2021-07-23 08:00 | 2021-10-01 10:00 |  | 31.75d |  |  |
| 171 | 1.3.1.1.1 | **Communications** | 49.25d | 2021-07-23 08:00 | 2021-10-01 10:00 |  | 31.75d |  |  |
| 172 | 1.3.1.1.1.1 | **Biweekly Client Meeting** | 49.25d | 2021-07-23 08:00 | 2021-10-01 10:00 | 158, 167 | 31.75d |  |  |
| 173 | 1.3.1.1.1.1.1 | Biweekly Client Meeting 1 | 2h | 2021-07-23 08:00 | 2021-07-23 10:00 |  | 80.75d |  | start no earlier than 2021-07-23 08:00 |
| 174 | 1.3.1.1.1.1.2 | Biweekly Client Meeting 2 | 2h | 2021-08-06 08:00 | 2021-08-06 10:00 |  | 70.75d |  | start no earlier than 2021-08-06 08:00 |
| 175 | 1.3.1.1.1.1.3 | Biweekly Client Meeting 3 | 2h | 2021-08-20 08:00 | 2021-08-20 10:00 |  | 60.75d |  | start no earlier than 2021-08-20 08:00 |
| 176 | 1.3.1.1.1.1.4 | Biweekly Client Meeting 4 | 2h | 2021-09-03 08:00 | 2021-09-03 10:00 |  | 50.75d |  | start no earlier than 2021-09-03 08:00 |
| 177 | 1.3.1.1.1.1.5 | Biweekly Client Meeting 5 | 2h | 2021-09-17 08:00 | 2021-09-17 10:00 |  | 41.75d |  | start no earlier than 2021-09-17 08:00 |
| 178 | 1.3.1.1.1.1.6 | Biweekly Client Meeting 6 | 2h | 2021-10-01 08:00 | 2021-10-01 10:00 |  | 31.75d |  | start no earlier than 2021-10-01 08:00 |

| ID | WBS | Task | Duration | Start | Finish | Predecessors | Total slack | Constraint |
| --- | --- | --- | --- | --- | --- | --- | --- | --- |
| 179 | 1.3.1.2 | **Team** | 54.25d | 2021-07-19 08:00 | 2021-10-04 10:00 |  | 30.75d |  |
| 180 | 1.3.1.2.1 | **Staff** | 0.5d | 2021-08-04 08:00 | 2021-08-04 12:00 |  | 72.5d |  |
| 181 | 1.3.1.2.1.1 | **Quarterly Staff Evaluation** | 0.5d | 2021-08-04 08:00 | 2021-08-04 12:00 | 158, 167 | 72.5d |  |
| 182 | 1.3.1.2.1.1.1 | Quarterly Staff Evaluation 1 | 4h | 2021-08-04 08:00 | 2021-08-04 12:00 |  | 72.5d | start no earlier than 2021-08-04 08:00 |
| 183 | 1.3.1.2.2 | **Communications** | 54.25d | 2021-07-19 08:00 | 2021-10-04 10:00 |  | 30.75d |  |
| 184 | 1.3.1.2.2.1 | **Weekly Staff Meeting** | 54.25d | 2021-07-19 08:00 | 2021-10-04 10:00 | 158, 167 | 30.75d |  |
| 185 | 1.3.1.2.2.1.1 | Weekly Staff Meeting 1 | 2h | 2021-07-19 08:00 | 2021-07-19 10:00 |  | 84.75d | start no earlier than 2021-07-19 08:00 |
| 186 | 1.3.1.2.2.1.2 | Weekly Staff Meeting 2 | 2h | 2021-07-26 08:00 | 2021-07-26 10:00 |  | 79.75d | start no earlier than 2021-07-26 08:00 |
| 187 | 1.3.1.2.2.1.3 | Weekly Staff Meeting 3 | 2h | 2021-08-02 08:00 | 2021-08-02 10:00 |  | 74.75d | start no earlier than 2021-08-02 08:00 |
| 188 | 1.3.1.2.2.1.4 | Weekly Staff Meeting 4 | 2h | 2021-08-09 08:00 | 2021-08-09 10:00 |  | 69.75d | start no earlier than 2021-08-09 08:00 |
| 189 | 1.3.1.2.2.1.5 | Weekly Staff Meeting 5 | 2h | 2021-08-16 08:00 | 2021-08-16 10:00 |  | 64.75d | start no earlier than 2021-08-16 08:00 |
| 190 | 1.3.1.2.2.1.6 | Weekly Staff Meeting 6 | 2h | 2021-08-23 08:00 | 2021-08-23 10:00 |  | 59.75d | start no earlier than 2021-08-23 08:00 |
| 191 | 1.3.1.2.2.1.7 | Weekly Staff Meeting 7 | 2h | 2021-08-30 08:00 | 2021-08-30 10:00 |  | 54.75d | start no earlier than 2021-08-30 08:00 |
| 192 | 1.3.1.2.2.1.8 | Weekly Staff Meeting 8 | 2h | 2021-09-13 08:00 | 2021-09-13 10:00 |  | 45.75d | start no earlier than 2021-09-13 08:00 |
| 193 | 1.3.1.2.2.1.9 | Weekly Staff Meeting 9 | 2h | 2021-09-20 08:00 | 2021-09-20 10:00 |  | 40.75d | start no earlier than 2021-09-20 08:00 |
| 194 | 1.3.1.2.2.1.10 | Weekly Staff Meeting 10 | 2h | 2021-09-27 08:00 | 2021-09-27 10:00 |  | 35.75d | start no earlier than 2021-09-27 08:00 |
| 195 | 1.3.1.2.2.1.11 | Weekly Staff Meeting 11 | 2h | 2021-10-04 08:00 | 2021-10-04 10:00 |  | 30.75d | start no earlier than 2021-10-04 08:00 |
| 196 | 1.3.2 | **Drone Testing** | 59d | 2021-07-19 08:00 | 2021-10-08 17:00 |  | 0d |  |
| 197 | 1.3.2.1 | **Flight** | 49d | 2021-07-19 08:00 | 2021-09-24 17:00 |  | 0d |  |
| 198 | 1.3.2.1.1 | **Drone Takeoff** | 15d | 2021-07-19 08:00 | 2021-08-06 17:00 |  | 0d |  |
| 199 | 1.3.2.1.1.1 | Test drone takeoff at DroneTech | 5d | 2021-07-19 08:00 | 2021-07-23 17:00 | 158, 167 | 0d |  |
| 200 | 1.3.2.1.1.2 | Test drone takeoff in field | 10d | 2021-07-26 08:00 | 2021-08-06 17:00 | 199 | 0d |  |
| 201 | 1.3.2.1.2 | **Weather Simulation** | 15d | 2021-08-09 08:00 | 2021-08-27 17:00 |  | 0d |  |
| 202 | 1.3.2.1.2.1 | Simulate rainy & windy flight at DroneTech | 10d | 2021-08-09 08:00 | 2021-08-20 17:00 | 200 | 0d |  |
| 203 | 1.3.2.1.2.2 | Fly drone in field on rainy day | 5d | 2021-08-23 08:00 | 2021-08-27 17:00 | 202 | 0d |  |

| ID | WBS | Task | Duration | Start | Finish | Predecessors | Total slack | Free slack | Constraint |
| --- | --- | --- | --- | --- | --- | --- | --- | --- | --- |
| 204 | 1.3.2.1.3 | **Geographical Constraints** | 19d | 2021-08-30 08:00 | 2021-09-24 17:00 |  | 0d |  |  |
| 205 | 1.3.2.1.3.1 | Flight with obstructions at DroneTech | 5d | 2021-08-30 08:00 | 2021-09-03 17:00 | 203 | 0d |  |  |
| 206 | 1.3.2.1.3.2 | Simulate flight in urban region of Gainesville | 14d | 2021-09-07 08:00 | 2021-09-24 17:00 | 205 | 0d |  |  |
| 207 | 1.3.2.2 | **Package Delivery** | 10d | 2021-09-27 08:00 | 2021-10-08 17:00 |  | 0d |  |  |
| 208 | 1.3.2.2.1 | **Successful Delivery** | 5d | 2021-09-27 08:00 | 2021-10-01 17:00 |  | 0d |  |  |
| 209 | 1.3.2.2.1.1 | Test flight at DroneTech, measure dropoff accuracy | 5d | 2021-09-27 08:00 | 2021-10-01 17:00 | 206 | 0d |  |  |
| 210 | 1.3.2.2.2 | **Integrity of Product Delivered** | 5d | 2021-10-04 08:00 | 2021-10-08 17:00 |  | 0d |  |  |
| 211 | 1.3.2.2.2.1 | Test flight at DroneTech, investigate product integrity | 5d | 2021-10-04 08:00 | 2021-10-08 17:00 | 209 | 0d |  |  |
| 212 | 1.3.3 | **App Testing** | 45d | 2021-07-19 08:00 | 2021-09-20 17:00 |  | 14d |  |  |
| 213 | 1.3.3.1 | **User Interface** | 15d | 2021-07-19 08:00 | 2021-08-06 17:00 |  | 14d |  |  |
| 214 | 1.3.3.1.1 | **Ordering** | 5d | 2021-07-19 08:00 | 2021-07-23 17:00 |  | 14d |  |  |
| 215 | 1.3.3.1.1.1 | Perform test order | 5d | 2021-07-19 08:00 | 2021-07-23 17:00 | 158, 167 | 14d | 0d |  |
| 216 | 1.3.3.1.2 | **Drone Preference** | 5d | 2021-07-26 08:00 | 2021-07-30 17:00 |  | 14d |  |  |
| 217 | 1.3.3.1.2.1 | Perform test drone opt-in | 5d | 2021-07-26 08:00 | 2021-07-30 17:00 | 215 | 14d | 0d |  |
| 218 | 1.3.3.1.3 | **Address Approval** | 3d | 2021-08-02 08:00 | 2021-08-04 17:00 |  | 14d |  |  |
| 219 | 1.3.3.1.3.1 | Perform test address input | 3d | 2021-08-02 08:00 | 2021-08-04 17:00 | 217 | 14d | 0d |  |
| 220 | 1.3.3.1.4 | **Order Confirmation** | 2d | 2021-08-05 08:00 | 2021-08-06 17:00 |  | 14d |  |  |
| 221 | 1.3.3.1.4.1 | Finish test order, receive confirmation | 2d | 2021-08-05 08:00 | 2021-08-06 17:00 | 219 | 14d | 0d |  |
| 222 | 1.3.3.2 | **Wilmont's Interface** | 30d | 2021-08-09 08:00 | 2021-09-20 17:00 |  | 14d |  |  |
| 223 | 1.3.3.2.1 | Perform test with Wilmont's on order receival | 15d | 2021-08-09 08:00 | 2021-08-27 17:00 | 221 | 14d | 0d |  |
| 224 | 1.3.3.2.2 | Perform test with Wilmont's on order transmittal | 15d | 2021-08-30 08:00 | 2021-09-20 17:00 | 223 | 14d |  |  |
| 225 | 1.4 | **Implement** | 26d | 2021-10-12 08:00 | 2021-11-17 17:00 |  | 0d |  |  |
| 226 | 1.4.1 | **Project Mgmt.** | 23.25d | 2021-10-12 08:00 | 2021-11-15 10:00 |  | 0d |  |  |
| 227 | 1.4.1.1 | **Client** | 22.25d | 2021-10-12 08:00 | 2021-11-12 10:00 |  | 0d |  |  |
| 228 | 1.4.1.1.1 | **Communications** | 19.25d | 2021-10-15 08:00 | 2021-11-12 10:00 |  | 3.75d |  |  |
| 229 | 1.4.1.1.1.1 | **Biweekly Client Meeting** | 19.25d | 2021-10-15 08:00 | 2021-11-12 10:00 | 211, 224 | 3.75d |  |  |
| 230 | 1.4.1.1.1.1.1 | Biweekly Client Meeting 1 | 2h | 2021-10-15 08:00 | 2021-10-15 10:00 |  | 22.75d |  | start no earlier than 2021-10-15 08:00 |
| 231 | 1.4.1.1.1.1.2 | Biweekly Client Meeting 2 | 2h | 2021-10-29 08:00 | 2021-10-29 10:00 |  | 12.75d |  | start no earlier than 2021-10-29 08:00 |
| 232 | 1.4.1.1.1.1.3 | Biweekly Client Meeting 3 | 2h | 2021-11-12 08:00 | 2021-11-12 10:00 |  | 3.75d |  | start no earlier than 2021-11-12 08:00 |

| ID | WBS | Task | Duration | Start | Finish | Predecessors | Total slack | Free slack | Constraint |
| --- | --- | --- | --- | --- | --- | --- | --- | --- | --- |
| 233 | 1.4.1.1.2 | **Approval** | 5d | 2021-10-12 08:00 | 2021-10-18 17:00 |  | 0d |  |  |
| 234 | 1.4.1.1.2.1 | Obtain approval of App | 5d | 2021-10-12 08:00 | 2021-10-18 17:00 | 224, 211 | 14d | 10d |  |
| 235 | 1.4.1.1.2.2 | Obtain approval of Prototype Drones | 5d | 2021-10-12 08:00 | 2021-10-18 17:00 | 224, 211 | 0d |  |  |
| 236 | 1.4.1.2 | **Team** | 19.25d | 2021-10-18 08:00 | 2021-11-15 10:00 |  | 2.75d |  |  |
| 237 | 1.4.1.2.1 | **Staff** | 0.5d | 2021-11-03 08:00 | 2021-11-03 12:00 |  | 9.5d |  |  |
| 238 | 1.4.1.2.1.1 | **Quarterly Staff Evaluation** | 0.5d | 2021-11-03 08:00 | 2021-11-03 12:00 | 224, 211 | 9.5d |  |  |
| 239 | 1.4.1.2.1.1.1 | Quarterly Staff Evaluation 1 | 4h | 2021-11-03 08:00 | 2021-11-03 12:00 |  | 9.5d |  | start no earlier than 2021-11-03 08:00 |
| 240 | 1.4.1.2.2 | **Communications** | 19.25d | 2021-10-18 08:00 | 2021-11-15 10:00 |  | 2.75d |  |  |
| 241 | 1.4.1.2.2.1 | **Weekly Staff Meeting** | 19.25d | 2021-10-18 08:00 | 2021-11-15 10:00 | 224, 211 | 2.75d |  |  |
| 242 | 1.4.1.2.2.1.1 | Weekly Staff Meeting 1 | 2h | 2021-10-18 08:00 | 2021-10-18 10:00 |  | 21.75d |  | start no earlier than 2021-10-18 08:00 |
| 243 | 1.4.1.2.2.1.2 | Weekly Staff Meeting 2 | 2h | 2021-10-25 08:00 | 2021-10-25 10:00 |  | 16.75d |  | start no earlier than 2021-10-25 08:00 |
| 244 | 1.4.1.2.2.1.3 | Weekly Staff Meeting 3 | 2h | 2021-11-01 08:00 | 2021-11-01 10:00 |  | 11.75d |  | start no earlier than 2021-11-01 08:00 |
| 245 | 1.4.1.2.2.1.4 | Weekly Staff Meeting 4 | 2h | 2021-11-08 08:00 | 2021-11-08 10:00 |  | 6.75d |  | start no earlier than 2021-11-08 08:00 |
| 246 | 1.4.1.2.2.1.5 | Weekly Staff Meeting 5 | 2h | 2021-11-15 08:00 | 2021-11-15 10:00 |  | 2.75d |  | start no earlier than 2021-11-15 08:00 |
| 247 | 1.4.2 | **Drone Implementation** | 14d | 2021-10-19 08:00 | 2021-11-05 17:00 |  | 0d |  |  |
| 248 | 1.4.2.1 | **Pharmacy** | 14d | 2021-10-19 08:00 | 2021-11-05 17:00 |  | 0d |  |  |
| 249 | 1.4.2.1.1 | **Training on drone use** | 14d | 2021-10-19 08:00 | 2021-11-05 17:00 |  | 0d |  |  |
| 250 | 1.4.2.1.1.1 | Providing prototypes to pharmacies | 2d | 2021-10-19 08:00 | 2021-10-20 17:00 | 235 | 0d |  |  |
| 251 | 1.4.2.1.1.2 | Briefing on drone handling | 2d | 2021-10-21 08:00 | 2021-10-22 17:00 | 250 | 0d |  |  |
| 252 | 1.4.2.1.1.3 | Interactive Drone Training | 10d | 2021-10-25 08:00 | 2021-11-05 17:00 | 251 | 0d |  |  |
| 253 | 1.4.2.2 | **Wilmont's** | 10d | 2021-10-19 08:00 | 2021-11-01 17:00 |  | 4d |  |  |
| 254 | 1.4.2.2.1 | Provide documentation on operation of drones | 1d | 2021-10-19 08:00 | 2021-10-19 17:00 | 235 | 5d | 1d |  |
| 255 | 1.4.2.2.2 | Interactive virtual workshop on operation of drones | 5d | 2021-10-21 08:00 | 2021-10-27 17:00 | 250, 254 | 4d | 0d |  |
| 256 | 1.4.2.2.3 | Providing information on repairs & maintenance | 1d | 2021-10-28 08:00 | 2021-10-28 17:00 | 255 | 4d | 0d |  |
| 257 | 1.4.2.2.4 | Interactive virtual workshops on repair & maintenance | 2d | 2021-10-29 08:00 | 2021-11-01 17:00 | 256 | 4d | 0d |  |

| ID | WBS | Task | Duration | Start | Finish | Predecessors | Total slack | Free slack |
| --- | --- | --- | --- | --- | --- | --- | --- | --- |
| 258 | 1.4.3 | **App Implementation** | 11d | 2021-11-02 08:00 | 2021-11-17 17:00 |  | 0d |  |
| 259 | 1.4.3.1 | **Pharmacy Staff** | 6d | 2021-11-08 08:00 | 2021-11-16 17:00 |  | 0d |  |
| 260 | 1.4.3.1.1 | **Training Pharmacy Staff on app use** | 5d | 2021-11-08 08:00 | 2021-11-15 17:00 |  | 0d |  |
| 261 | 1.4.3.1.1.1 | Organizing interactive app training workshops | 1d | 2021-11-08 08:00 | 2021-11-08 17:00 | 234, 252 | 0d |  |
| 262 | 1.4.3.1.1.2 | Training pharmacy staff on information transfer | 4d | 2021-11-09 08:00 | 2021-11-15 17:00 | 261 | 0d |  |
| 263 | 1.4.3.1.2 | **Provide documentation to pharmacy** | 1d | 2021-11-16 08:00 | 2021-11-16 17:00 |  | 0d |  |
| 264 | 1.4.3.1.2.1 | Do's and Dont's | 1d | 2021-11-16 08:00 | 2021-11-16 17:00 | 262 | 0d |  |
| 265 | 1.4.3.2 | **Wilmont's Staff** | 11d | 2021-11-02 08:00 | 2021-11-17 17:00 |  | 0d |  |
| 266 | 1.4.3.2.1 | **Training Wilmont's Staff on app use** | 6d | 2021-11-02 08:00 | 2021-11-09 17:00 |  | 4d |  |
| 267 | 1.4.3.2.1.1 | Providing Wilmont staff with documentation on app operation | 1d | 2021-11-02 08:00 | 2021-11-02 17:00 | 257, 234 | 4d | 0d |
| 268 | 1.4.3.2.1.2 | Training Wilmont's staff on information transfer to DroneTech | 5d | 2021-11-03 08:00 | 2021-11-09 17:00 | 267 | 4d |  |
| 269 | 1.4.3.2.2 | **Making Wilmont's app update available** | 1d | 2021-11-17 08:00 | 2021-11-17 17:00 |  | 0d |  |
| 270 | 1.4.3.2.2.1 | Submitting final app update to App Store/Google Store. | 1d | 2021-11-17 08:00 | 2021-11-17 17:00 | 268, 264 | 0d |  |
